# PLANNING PREVISIONNEL

Schedule from MS Project XML, 2009-09-21 to 2026-12-18.

## Calendars

- Standard: Mon-Fri 08:00-12:00, 13:00-17:00; Sat-Sun off. Exceptions (off unless hours are given): 2020-02-01 08:00-12:00, 13:00-17:00.

## Resources

| Resource |
| --- |
| sous |
| sous réserve consignations jeux de barres 63KV |
| xxxxxxxxxxx |
| Mise en service TR633/COUPLAGE/CEL.RACORD225KV/CEL.RACCORD63KV |
| Mise en service |
| Mise en service instal.liées au TR633 |
| Mise en service TR632 170MVA |
| Mise en service installations liées au TR633 |
| Mise en service installations liées au TR633(hors couplage) |
| OMEXOM |
| SOGECER |
| GIMR |
| SESE |
| CE GET |
| CONST. |
| EEP GET |
| FG SYNERYS |
| OMEXOM EEE |
| CABANIE |
| SMIT |
| SESO |
| GT AZUR |
| CE EGT |
| CE GET |
| SOGECR |
| GET CE |
| GDP |
| Const |
| GET |
| RTE-OMEXOM |
| Sous traitant GT AZUR |
| RTE-SMIT |
| RTE-CONST. |
| GET - CONST. |
| GET-CONST. |
| ERDF |
| TST RTE |
| CONST. - GET |
| OMEXOM / RTE |
| RTE |
| GC |
| GT AZUR - RTE |
| ST/OMEXOM |
| AREVA |
| HAPAM |
| SDCEM |
| RTE-SDMO |
| CE GET-SMIT |
| SIEMENS |
| ALSTOM |
| GdP-CONST. |
| ALCATEL |
| GdP PORTET |
| GdP BALMA |
| HELCOM |
| MALACAN |
| ST GC |
| SDMO |
| GdP LESPARAT |
| GdP-ALSTOM |
| ANTENNE TELECOMT |
| EMSP |
| GdP-OMEXOM |
| GDP - CE |
| ANTENNE TELECOM |
| ANTENNE GESCC |
| PEXI |
| Antenne TCM |
| BATI PLUS |
| BOUDARIOS |
| ARHELEC |
| EMASI |
| GdP-HAPAM |
| GMR |
| ST GT AZUR |
| DIT |
| GdP BASTILLAC |
| DATA HERTZ |
| Constructeur |
| GdP MARSILLON |
| ALSTOM/SDEL |
| GdP BASTILLAC / EMASI |
| ST OMEXOM |
| SDEL |
| EMASI/GdP BASTILLAC |
| VALGO |
| Câblier |
| GdP BASTILLAC/constructeur |
| EMASI/ERDF |
| CETEAM |
| ETPM |
| ALSTOM/EMASI |
| ALSTOM / EMASI |
| TIRONI |
| ABB |
| GdP BASTILLAC/ALSTOM |
| GdP BASTILLAC/SIEMENS |
| EFFASEC |
| CoURCELLE |
| OMEXOM/EMASI |
| EMASI/AMEPS |
| SOLIDAL |
| PPFISTERER |
| PFISTERER |
| ST INEO |
| INEO |
| GdP CUBNEZAIS |
| EMASI/GdP CUBNEZAIS |
| EMASI/PMSASI |
| ESMP GASCOGNE |
| EMSP GASCOGNE |
| PMSASI |
| Ensemblier |
| EMASI/SDEL |
| GdP CUBNEZAIS/Constructeur |
| EMASI/OMEXOM |
| ENGIE |
| ST ENGIE |
| INGIE |
| GdP CUBNEZAIS/DIT |
| PMASI |
| SDEL CC |
| EMSP GASCOGNE/EMASI |
| OMEXOM/RTE |
| OMEXOM/GdP FLOIRAC |
| OMEXOM/GdP LESPARAT |
| OMEXOM/GdP BALMA |
| OMEXOM / GdP FLEAC |
| PMASI/EMASI |
| PMSASI/EMASI |
| JEROME |
| ERI |
| ZIMMER |
| OMEXOM/SDEL |
| GE |
| GdP CUBNEZAIS/GE |
| EMASI/GDP FLOIRAC |
| SDEL MES |
| DIT / GME |
| EMASI POITOU CHARENTE |
| EIFFAGE |
| EMASI PYRENEES et EMASI GASCOGNE |
| SEIMA |
| GdP FLOIRAC |
| SDEL INST |
| Ensemblier RTE |
| GdP FLOIRAC / EMASI |
| ESMP PYRENEES |
| EMPS PYRENEES |
| GIE A DEFINIR |
| OMEXOM MS |
| PMSASI/GDP FLOIRAC |
| EMSP PYRENEES |
| OMEXOM MP |
| JOUVELEC |
| GPP FLOIRAC |
| RTE-OMEXOM-JOUVELEC |
| RTE-OMEXOM-GE-SDEL-CAPSOLAR |
| ST GC OMEXOM |
| GdP BALMA/EMASI |
| GdP BLAMA |
| CAPSOLAR |
| CAPSOLAR-SDEL |
| EMSAI |
| AIS |
| AIS/GDP BALMA |
| GMR/AIS |
| CMB |
| EMASI/GdP BALMA |
| ENEDIS |
| AIS MPS |
| TOUS |
| GdP BALMA/AIS |
| GdP BLAMA/AIS |
| OEMXOM |
| ST BATIMENT |
| ST FO OMEXOM |
| GdP PESSAC |
| ST GE |
| GE/SDEL |
| EMASI/AIS |
| IOMEXOM |
| BOUYGUES |
| JST |
| ST GENIE CIVIL |
| GdP CASSEAUX |
| GdP CASSEAUX / JST |
| DIM |
| OMEXOM/DIM |
| GdP MONTPELLIER |
| OMEXOM LA |
| EMSI |
| PHV |
| CDIT |
| OMEXOM / RES |
| EYLO ENERGIE |
| MASTERGRID |
| ST LS |
| OMEXOM LS |
| NEXANS |
| CDIM |
| PRYSMIAN |
| MASTERGID |
| PAO |
| AXIANS |

## Schedule

| ID | WBS | Task | Type | Duration | Start | Finish | Predecessors | Baseline start | Baseline finish | Baseline duration | Total slack | Constraint | Resources | Work | DAOE | Texte1 |
| --- | --- | --- | --- | --- | --- | --- | --- | --- | --- | --- | --- | --- | --- | --- | --- | --- |
| 1 | 1 | **LA GAUDIERE** |  | 4501d? | 2009-09-21 | 2026-12-18 |  | 2010-05-03 | 2011-04-07 | 244d? | 0d |  |  | 2887.2h |  |  |
| 3 | 1.1 | **ETUDES** |  | 4501d | 2009-09-21 | 2026-12-18 |  | 2007-05-15 | 2007-05-29 | 11d | 0d |  |  | 184h |  |  |
| 4 | 1.1.1 | DossierV1 |  | 1d | 2025-03-06 | 2025-03-06 |  |  |  |  | 466d | start no earlier than 2025-03-06 | OMEXOM | 8h |  |  |
| 5 | 1.1.2 | DossierV2 |  | 1d | 2025-05-23 | 2025-05-23 |  |  |  |  | 410d | start no earlier than 2025-05-23 | OMEXOM | 8h |  |  |
| 6 | 1.1.3 | Dossier DTT |  | 1d | 2025-07-25 | 2025-07-25 |  |  |  |  | 365d | start no earlier than 2025-07-25 | OMEXOM | 8h |  |  |
| 8 | 1.1.4 | CAE DEBENAS |  | 10d | 2026-12-07 | 2026-12-18 | 134 |  |  |  | 0d |  | OMEXOM | 80h |  |  |
| 9 | 1.1.5 | CAE C.AUDE |  | 10d | 2009-09-21 | 2009-10-02 |  |  |  |  | 4491d |  | OMEXOM | 80h |  |  |
| 11 | 1.2 | **Poste 225kV de LA GAUDIERE** |  | 4500d? | 2009-09-21 | 2026-12-17 |  |  |  |  | 1d |  |  | 2703.2h |  |  |
| 13 | 1.2.1 | **CONSTRUCTION CELLULE DEBENAS 225kV** |  | 4500d? | 2009-09-21 | 2026-12-17 |  | 2007-05-30 | 2007-07-31 | 45d? | 1d |  |  | 2703.2h |  |  |
| 15 | 1.2.1.1 | **REUNIONS TRAVAUX** |  | 64d | 2026-01-22 | 2026-04-21 |  | 2007-05-15 | 2007-05-29 | 11d | 0d |  |  |  |  |  |
| 16 | 1.2.1.1.1 | Réunion mensuelle N°1 | manual | 1d | 2026-01-22 | 2026-01-22 |  |  |  |  |  |  |  |  |  |  |
| 17 | 1.2.1.1.2 | Réunion mensuelle N°2 |  | 1d | 2026-02-17 | 2026-02-17 |  |  |  |  | 218d | start no earlier than 2026-02-17 |  |  |  |  |
| 18 | 1.2.1.1.3 | Réunion mensuelle N°3 | manual | 1d | 2026-03-17 | 2026-03-17 |  |  |  |  |  |  |  |  |  |  |
| 19 | 1.2.1.1.4 | Réunion mensuelle N°4 |  | 1d | 2026-04-21 | 2026-04-21 |  |  |  |  | 173d | start no earlier than 2026-04-21 |  |  |  |  |
| 21 | 1.2.1.2 | **INSTALLATION DE CHANTIER** |  | 54d | 2025-11-04 | 2026-01-16 |  | 2007-05-15 | 2007-05-29 | 11d | 0d |  |  | 88h |  |  |
| 22 | 1.2.1.2.1 | Plan de prévention | manual | 1d | 2025-11-04 | 2025-11-04 |  | 2007-05-15 | 2007-05-15 | 1d |  |  | RTE-OMEXOM | 8h |  |  |
| 23 | 1.2.1.2.2 | Installation de la base Vie |  | 10d | 2026-01-05 | 2026-01-16 |  |  |  |  | 240d | finish no earlier than 2026-01-16 | OMEXOM | 80h | AT |  |
| 25 | 1.2.1.3 | **LIVRAISON** |  | 222d | 2026-01-05 | 2026-11-10 |  |  |  |  | 28d |  |  |  |  |  |
| 26 | 1.2.1.3.1 | Livraison OL 380165645 - FO |  | 1d | 2026-01-12 | 2026-01-12 |  |  |  |  | 244d | start no earlier than 2026-01-12 |  |  |  |  |
| 27 | 1.2.1.3.2 | Livraison OL 380165644 - CABLE BT |  | 1d | 2026-01-12 | 2026-01-12 |  |  |  |  | 244d | start no earlier than 2026-01-12 |  |  |  |  |
| 28 | 1.2.1.3.3 | Livraison OL 380166427 - DJ + TC + TCT + TORE |  | 1d | 2026-02-17 | 2026-02-17 |  |  |  |  | 218d | start no earlier than 2026-02-17 |  |  |  |  |
| 29 | 1.2.1.3.4 | Livraison OL 480099536 - Sectionneurs |  | 1d | 2026-02-17 | 2026-02-17 |  |  |  |  | 218d | start no earlier than 2026-02-17 |  |  |  |  |
| 30 | 1.2.1.3.5 | Charpentes |  | 1d | 2026-01-19 | 2026-01-19 | 71SS-10d |  |  |  | 239d |  |  |  |  |  |
| 31 | 1.2.1.3.6 | Câble HT |  | 1d | 2026-03-05 | 2026-03-05 | 78SS-10d |  |  |  | 206d |  |  |  |  |  |
| 32 | 1.2.1.3.7 | Armoire BT |  | 1d | 2026-03-13 | 2026-03-13 | 81SS-10d |  |  |  | 200d | start no earlier than 2025-03-25 |  |  |  |  |
| 33 | 1.2.1.3.8 | Livraison OL 480099243 - IDEA OPTICAL |  | 1d | 2026-01-12 | 2026-01-12 |  |  |  |  | 244d | start no earlier than 2026-01-12 |  |  |  |  |
| 34 | 1.2.1.3.9 | Livraison OL 480099066 - IDEA OPTICAL |  | 1d | 2026-01-05 | 2026-01-05 |  |  |  |  | 249d | start no earlier than 2026-01-05 |  |  |  |  |
| 35 | 1.2.1.3.10 | Livraison OL 380166116 - Matériel TCM |  | 1d | 2026-01-12 | 2026-01-12 |  |  |  |  | 244d | start no earlier than 2026-01-12 |  |  |  |  |
| 36 | 1.2.1.3.11 | Livraison OL 380165786 - CABLE BT |  | 1d | 2026-01-20 | 2026-01-20 |  |  |  |  | 238d | start no earlier than 2026-01-20 |  |  |  |  |
| 37 | 1.2.1.3.12 | Livraison Colonne SB |  | 1d | 2026-02-10 | 2026-02-10 |  |  |  |  | 223d | start no earlier than 2026-02-10 |  |  |  | 8 |
| 38 | 1.2.1.3.13 | Livraison Armoire comptage |  | 1d | 2026-11-10 | 2026-11-10 |  |  |  |  | 28d | start no earlier than 2026-11-10 |  |  |  | 8 |

| ID | WBS | Task | Type | Duration | Start | Finish | Predecessors | Baseline start | Baseline finish | Baseline duration | Total slack | Free slack | Constraint | Resources | Work | Texte1 | DAOE | Indicateur1 |
| --- | --- | --- | --- | --- | --- | --- | --- | --- | --- | --- | --- | --- | --- | --- | --- | --- | --- | --- |
| 40 | 1.2.1.4 | **TRAVAUX LS DEBENAS POSTE DE LA GAUDIERE** |  | 49d | 2026-09-07 | 2026-11-12 |  | 2007-05-15 | 2007-05-29 | 11d | 21d |  |  |  | 392h |  |  |  |
| 41 | 1.2.1.4.1 | GC en PEHD 180 |  | 5d | 2026-09-07 | 2026-09-11 |  | 2007-05-16 | 2007-05-29 | 10d | 21d | 0d | start no earlier than 2026-09-07 | OMEXOM LS | 40h | 7 | AT |  |
| 42 | 1.2.1.4.2 | Ouverture ouvrage remontée GAUDIERE |  | 5d | 2026-09-14 | 2026-09-18 | 41 | 2007-05-16 | 2007-05-29 | 10d | 21d | 0d | start no earlier than 2026-02-09 | OMEXOM LS | 40h | 7 | AT |  |
| 43 | 1.2.1.4.3 | Ouverture ouvrage remontée DEBENAS |  | 5d | 2026-09-21 | 2026-09-25 | 42 | 2007-05-16 | 2007-05-29 | 10d | 21d | 0d | start no earlier than 2026-02-16 | OMEXOM LS | 40h | 7 | AT |  |
| 44 | 1.2.1.4.4 | Aiguillage des fourreaux |  | 1d | 2026-09-28 | 2026-09-28 | 43 | 2007-05-16 | 2007-05-29 | 10d | 21d | 0d | start no earlier than 2026-02-24 | OMEXOM LS | 8h | 7 | AT |  |
| 45 | 1.2.1.4.5 | Déroulage des câbles de puissance |  | 2d | 2026-09-29 | 2026-09-30 | 44 | 2007-05-16 | 2007-05-29 | 10d | 21d | 0d | start no earlier than 2026-02-25 | OMEXOM LS | 16h | 7 | AT |  |
| 46 | 1.2.1.4.6 | Essais de gaine après déroulage |  | 1d | 2026-10-01 | 2026-10-01 | 45 |  |  |  | 21d | 0d | start no earlier than 2026-02-27 | OMEXOM LS | 8h | 9 | RR |  |
| 47 | 1.2.1.4.7 | Déroulage câble de terre |  | 3d | 2026-10-02 | 2026-10-06 | 46 | 2007-05-16 | 2007-05-29 | 10d | 21d | 0d | start no earlier than 2026-03-02 | OMEXOM LS | 24h | 7 | AT |  |
| 48 | 1.2.1.4.8 | Déroulage des 2 câbles FO |  | 2d | 2026-10-07 | 2026-10-08 | 47 | 2007-05-16 | 2007-05-29 | 10d | 21d | 0d | start no earlier than 2026-03-05 | OMEXOM LS | 16h | 7 | AT |  |
| 49 | 1.2.1.4.9 | Confection extrémitées GAUDIERE |  | 10d | 2026-10-09 | 2026-10-22 | 48 |  |  |  | 21d | 0d | start no earlier than 2026-03-09 | PRYSMIAN | 80h | 7 | AT |  |
| 50 | 1.2.1.4.10 | Confection extrémitées DEBENAS |  | 10d | 2026-10-23 | 2026-11-05 | 49 |  |  |  | 21d | 0d |  | PRYSMIAN | 80h | 7 | AT |  |
| 51 | 1.2.1.4.11 | Remblai ouvrage de remontée GAUDIERE |  | 2d | 2026-11-06 | 2026-11-09 | 50 |  |  |  | 21d | 0d |  | OMEXOM LS | 16h | 7 | AT |  |
| 52 | 1.2.1.4.12 | Remblai ouvrage de remontée DEBENAS |  | 2d | 2026-11-10 | 2026-11-11 | 51 |  |  |  | 21d | 0d | start no earlier than 2023-08-04 | OMEXOM LS | 16h | 7 | AT |  |
| 53 | 1.2.1.4.13 | Essais final câblier |  | 1d | 2026-11-12 | 2026-11-12 | 52 |  |  |  | 21d | 0d | start no earlier than 2023-08-04 | PRYSMIAN | 8h | 9 | RR |  |
| 54 | 1.2.1.4.14 | Annexe B LS DEBENAS - LA GAUDIERE | milestone | 0d | 2026-11-12 | 2026-11-12 | 53 | 2007-05-30 | 2007-07-10 | 30d | 26d |  | start no earlier than 2011-05-27 | PRYSMIAN |  | 7 |  |  |
| 55 | 1.2.1.4.15 | Annexe C LS DEBENAS - LA GAUDIERE | milestone | 0d | 2026-11-12 | 2026-11-12 | 53 | 2007-05-30 | 2007-07-10 | 30d | 26d |  | start no earlier than 2011-05-27 | CDIM |  | 7 |  |  |
| 57 | 1.2.1.5 | **TRAVAUX DEPART DEBENAS POSTE DE LA GAUDIERE** |  | 239d? | 2026-01-05 | 2026-12-03 |  |  |  |  | 11d |  |  |  | 1839.2h |  |  |  |
| 58 | 1.2.1.5.1 | Point de Convocation : Démarrage travaux de fondations | manual | 1d | 2026-01-05 | 2026-01-05 |  |  |  |  |  |  |  |  |  |  |  |  |
| 59 | 1.2.1.5.2 | Réalisation des massifs |  | 15d | 2026-01-05 | 2026-01-23 |  |  |  |  | 225d | 0d | start no earlier than 2026-01-05 | ST GC | 120h | 5 | AT | 1 |
| 60 | 1.2.1.5.3 | Point de Convocation : Premier massif coulés Charpente principale | manual | 1d | 2026-01-05 | 2026-01-05 |  |  |  |  |  |  |  |  |  |  |  |  |
| 61 | 1.2.1.5.4 | Circuit de terre |  | 20d | 2026-01-19 | 2026-02-13 |  |  |  |  | 220d |  | start no earlier than 2026-01-19 | ST GC; OMEXOM | 320h | 5 | AT |  |
| 62 | 1.2.1.5.5 | Point de Convocation : Circuit de terre | manual | 1d | 2026-01-05 | 2026-01-05 |  |  |  |  |  |  |  |  |  |  |  |  |
| 63 | 1.2.1.5.6 | Réalisation des caniveaux et tranchées BT |  | 10d | 2026-01-19 | 2026-01-30 | 59FS-5d |  |  |  | 225d | 0d |  | ST GC | 80h | 5 | AT |  |
| 64 | 1.2.1.5.7 | Tirage des liaisons FO |  | 5d | 2026-02-02 | 2026-02-06 | 63 |  |  |  | 225d |  |  | OMEXOM | 40h | 5 | AT |  |
| 65 | 1.2.1.5.8 | Tirage liaison BT |  | 10d | 2026-01-26 | 2026-02-06 |  |  |  |  | 225d |  | start no earlier than 2026-01-26 | OMEXOM | 80h |  | AT |  |
| 66 | 1.2.1.5.9 | Test Tourets FO |  | 5d | 2026-02-16 | 2026-02-20 |  |  |  |  | 215d |  | start no earlier than 2026-02-16 | AXIANS | 40h | 9 | AT |  |
| 67 | 1.2.1.5.10 | Raccordement FO |  | 5d | 2026-11-09 | 2026-11-13 |  |  |  |  | 25d | 0d | start no earlier than 2026-11-09 | AXIANS | 40h | 7 | AT |  |
| 68 | 1.2.1.5.11 | PV de Réception FO | milestone | 0d | 2026-11-13 | 2026-11-13 | 67 |  |  |  | 25d |  |  | ST FO OMEXOM |  | 7 |  |  |
| 69 | 1.2.1.5.12 | Déclaration d'achèvement de travaux Réseaux FO | milestone | 0d | 2026-11-13 | 2026-11-13 | 67 |  |  |  | 25d |  |  | OMEXOM |  | 7 | ANNEXE B |  |
| 70 | 1.2.1.5.13 | Réception FO |  | 2d | 2026-11-25 | 2026-11-26 |  |  |  |  | 16d |  | start no earlier than 2026-11-25 | EMASI | 16h | 7 | AT |  |
| 71 | 1.2.1.5.14 | Montage des charpentes |  | 20d | 2026-02-02 | 2026-02-27 |  |  |  |  | 210d | 0d | start no earlier than 2026-02-02 | OMEXOM | 160h | 9 | AT |  |
| 72 | 1.2.1.5.15 | Reprise suite intempéries |  | 5d | 2026-03-02 | 2026-03-06 |  |  |  |  | 205d |  | start no earlier than 2026-03-02 | CABANIE | 40h |  |  |  |
| 73 | 1.2.1.5.16 | Consignation UA ALT |  | 0.2d | 2026-03-05 | 2026-03-05 |  |  |  |  | 206.1d | 0d | start no earlier than 2026-03-05 | GDP | 1.6h | 8 | NIPCO |  |
| 74 | 1.2.1.5.17 | Ajout de la nouvelle colonne SB |  | 0.5d | 2026-03-05 | 2026-03-05 | 73 |  |  |  | 206.1d | 0d |  | OMEXOM | 4h | 10 | ADC |  |
| 75 | 1.2.1.5.18 | Déconsignation UA ALT |  | 0.2d | 2026-03-05 | 2026-03-05 | 74 |  |  |  | 206.1d |  |  | GDP | 1.6h | 8 | NIPCO |  |
| 76 | 1.2.1.5.19 | Pose TC + TT + ST + SL + DJ |  | 14d | 2026-02-27 | 2026-03-18 |  |  |  |  | 181d | 0d | finish no earlier than 2026-03-18 | OMEXOM | 112h | 10 | AT |  |
| 77 | 1.2.1.5.20 | Point de Convocation : Premier Sertissage | manual | 1d | 2026-03-19 | 2026-03-19 |  |  |  |  |  |  |  |  |  |  |  |  |
| 78 | 1.2.1.5.21 | Raccordement HT |  | 5d | 2026-03-19 | 2026-03-25 | 76 |  |  |  | 181d | 0d |  | OMEXOM | 40h |  | AT |  |
| 79 | 1.2.1.5.22 | Réglage ST + SL |  | 3d | 2026-03-26 | 2026-03-30 | 78 |  |  |  | 189d |  |  | MASTERGRID | 24h |  | AT |  |
| 80 | 1.2.1.5.23 | Pose charpentes SA1 et SA2 |  | 1d | 2026-03-26 | 2026-03-26 | 78 |  |  |  | 181d | 0d |  | OMEXOM | 8h |  | AT |  |
| 81 | 1.2.1.5.24 | Installation Armoire BT |  | 2d | 2026-03-27 | 2026-03-30 | 80 |  |  |  | 181d | 0d |  | OMEXOM | 16h |  | AT |  |
| 82 | 1.2.1.5.25 | Raccordement BT |  | 7d | 2026-03-31 | 2026-04-08 | 81 |  |  |  | 181d | 0d |  | OMEXOM | 56h |  | AT |  |
| 83 | 1.2.1.5.26 | Annexe B - Déclaration d'achément des travaux Départ DEBENAS HORS SAB HT+BT | milestone | 0d | 2026-04-08 | 2026-04-08 | 82 |  |  |  | 181d | 0d |  | OMEXOM |  |  | ANNEXE B |  |
| 84 | 1.2.1.5.27 | Annexe C - Désignation chargé d'exploitation Départ DEBENAS HORS SAB HT+BT | milestone | 0d | 2026-04-08 | 2026-04-08 | 83 | 2007-05-30 | 2007-07-10 | 30d | 181d | 51.5d | start no earlier than 2011-05-27 | DIT |  | 10 | ANNEXE C |  |
| 85 | 1.2.1.5.28 | Consignation BT Départ DEBENAS Hors SAB HT+BT |  | 1d? | 2026-04-09 | 2026-04-09 |  |  |  |  | 181d |  | start no earlier than 2026-04-09 | GDP | 8h | 10 |  |  |
| 86 | 1.2.1.5.29 | Réalisation de la piste côté DJ |  | 10d | 2026-04-27 | 2026-05-08 |  |  |  |  | 160d |  | start no earlier than 2026-04-27 | ST GC | 80h | 10 | AT |  |
| 87 | 1.2.1.5.30 | Réalisation des pistes |  | 5d | 2026-11-13 | 2026-11-19 | 53 |  |  |  | 21d |  |  | ST GC | 40h |  | AT |  |
| 88 | 1.2.1.5.31 | Mise en service DJ |  | 1d | 2026-04-14 | 2026-04-14 |  |  |  |  | 178d |  | start no earlier than 2026-04-14 | SIEMENS; OMEXOM | 16h | 10 | AT |  |
| 89 | 1.2.1.5.32 | Déconsignation BT pour CVS | milestone | 0d | 2026-04-20 | 2026-04-20 |  |  |  |  | 175d |  | start no earlier than 2026-04-20 | GDP |  | 10 |  |  |
| 90 | 1.2.1.5.33 | CVS |  | 5d | 2026-04-20 | 2026-04-24 |  |  |  |  | 170d |  | start no earlier than 2026-04-20 | EMASI | 40h |  |  |  |
| 91 | 1.2.1.5.34 | Chargement nouvelle BD |  | 1d | 2026-04-21 | 2026-04-21 |  |  |  |  | 173d |  | start no earlier than 2026-04-21 | EMASI | 8h | 4 |  |  |
| 93 | 1.2.1.5.36 | CVS Fin |  | 4d | 2026-11-30 | 2026-12-03 | 128 |  |  |  | 0d |  | start no earlier than 2026-11-30 | EMASI | 32h | 7 |  |  |
| 94 | 1.2.1.5.37 | Essais E3C-stw |  | 1d | 2026-12-02 | 2026-12-02 |  |  |  |  | 12d |  | start no earlier than 2026-12-02 | EMASI | 8h | 7 |  |  |
| 95 | 1.2.1.5.38 | Réception comptage |  | 2d | 2026-12-01 | 2026-12-02 |  |  |  |  | 12d |  | start no earlier than 2026-12-01 | EMASI | 16h | 7 |  |  |
| 96 | 1.2.1.5.39 | Reprise de régalge suite à indisponibilité DIFF - Départs à confirmer |  | 1d | 2026-11-30 | 2026-11-30 |  |  |  |  | 14d |  | start no earlier than 2026-11-30 | EMASI; PAO | 16h | 10 |  |  |
| 97 | 1.2.1.5.40 | Réception DIFF |  | 2d | 2026-12-01 | 2026-12-02 |  |  |  |  | 11d | 0d | start no earlier than 2026-12-01 | PAO | 16h | 9 |  |  |
| 98 | 1.2.1.5.41 | Reprise de régalge suite à indisponibilité DIFF - Départs à confirmer |  | 1d | 2026-12-03 | 2026-12-03 | 97 |  |  |  | 11d |  |  | EMASI; PAO | 16h | 10 |  |  |

| ID | WBS | Task | Type | Duration | Start | Finish | Predecessors | Baseline start | Baseline finish | Baseline duration | Total slack | Free slack | Constraint | Resources | Work | Texte1 | DAOE |
| --- | --- | --- | --- | --- | --- | --- | --- | --- | --- | --- | --- | --- | --- | --- | --- | --- | --- |
| 100 | 1.2.1.5.43 | **Consignation BO1 225kV** |  | 15.5d | 2026-06-01 | 2026-06-22 |  | 2007-05-16 | 2007-05-29 | 10d | 129.5d |  |  | GMR | 192h | 5 |  |
| 101 | 1.2.1.5.43.1 | Consignation BO1 225kV |  | 0.5d | 2026-06-01 | 2026-06-01 |  |  |  |  | 140.5d | 0d | start no earlier than 2026-06-01 | GDP | 4h | 5 |  |
| 102 | 1.2.1.5.43.2 | Montage SA1 |  | 3d | 2026-06-01 | 2026-06-04 | 101 |  |  |  | 140.5d | 0d |  | OMEXOM | 24h | 5 | A1EC |
| 103 | 1.2.1.5.43.3 | Annexe B - Déclaration d'achément des travaux Départ DEBENAS | milestone | 0d | 2026-06-04 | 2026-06-04 | 102 |  |  |  | 141.5d |  |  | OMEXOM |  | 9 | ANNEXE B |
| 104 | 1.2.1.5.43.4 | Annexe C - Désignation chargé d'exploitation départ DEBENAS | milestone | 0d | 2026-06-04 | 2026-06-04 | 102 | 2007-05-30 | 2007-07-10 | 30d | 140.5d | 11d | start no earlier than 2011-05-27 | DIT |  | 9 | ANNEXE C |
| 105 | 1.2.1.5.43.5 | Raccordement HT SA -> DJ |  | 1d | 2026-06-19 | 2026-06-22 | 104, 114, 84 |  |  |  | 129.5d |  |  | OMEXOM | 8h | 5 | A1EC |
| 106 | 1.2.1.5.43.6 | Réglages SECTIONNEUR |  | 2.5d | 2026-06-08 | 2026-06-10 |  |  |  |  | 137.5d |  | start no earlier than 2026-06-08 | MASTERGRID | 20h | 9 | A1EC |
| 107 | 1.2.1.5.43.7 | Réception |  | 1d | 2026-06-10 | 2026-06-10 |  |  |  |  | 137d |  | start no earlier than 2026-06-10 | EMASI | 8h | 9 |  |
| 108 | 1.2.1.5.43.8 | Déconsignation BO1 225kV |  | 0.5d | 2026-06-12 | 2026-06-12 |  |  |  |  | 135.5d |  | start no earlier than 2026-06-12 | GDP | 4h | 5 |  |
| 110 | 1.2.1.5.44 | **Consignation BO2 225kV** |  | 9.5d | 2026-06-15 | 2026-06-26 |  | 2007-05-16 | 2007-05-29 | 10d | 125.5d |  |  | GMR | 152h | 5 |  |
| 111 | 1.2.1.5.44.1 | Consignation BO2 225kV |  | 0.5d | 2026-06-15 | 2026-06-15 |  |  |  |  | 129.5d | 0d | start no earlier than 2026-06-15 | GDP | 4h | 5 |  |
| 112 | 1.2.1.5.44.2 | Montage SA2 |  | 4d | 2026-06-15 | 2026-06-19 | 111 |  |  |  | 129.5d | 0d |  | OMEXOM | 32h | 5 | A1EC |
| 113 | 1.2.1.5.44.3 | Annexe B - Déclaration d'achément des travaux Départ DEBENAS | milestone | 0d | 2026-06-19 | 2026-06-19 | 112 |  |  |  | 129.5d | 0d |  | OMEXOM |  | 9 | ANNEXE B |
| 114 | 1.2.1.5.44.4 | Annexe C - Désignation chargé d'exploitation Départ DEBENAS | milestone | 0d | 2026-06-19 | 2026-06-19 | 113 | 2007-05-30 | 2007-07-10 | 30d | 129.5d | 0d | start no earlier than 2011-05-27 | DIT |  | 9 | ANNEXE C |
| 115 | 1.2.1.5.44.5 | Raccordement HT SA -> DJ |  | 1d | 2026-06-19 | 2026-06-22 | 114 |  |  |  | 129.5d |  |  | OMEXOM | 8h | 5 | A1EC |
| 116 | 1.2.1.5.44.6 | Réglages SECTIONNEUR |  | 2.5d | 2026-06-22 | 2026-06-24 |  |  |  |  | 127.5d |  | start no earlier than 2026-06-22 | MASTERGRID | 20h | 9 | A1EC |
| 117 | 1.2.1.5.44.7 | Réception |  | 1d | 2026-06-24 | 2026-06-24 |  |  |  |  | 127d |  | start no earlier than 2026-06-24 | EMASI | 8h | 9 |  |
| 118 | 1.2.1.5.44.8 | Déconsignation BO2 225kV |  | 0.5d | 2026-06-26 | 2026-06-26 |  |  |  |  | 125.5d |  | start no earlier than 2026-06-26 | GDP | 4h | 5 |  |
| 120 | 1.2.1.6 | **ENCADRANT POSTE DE DEBENAS** |  | 4500d? | 2009-09-21 | 2026-12-17 |  |  |  |  | 1d |  |  |  | 384h |  |  |
| 121 | 1.2.1.6.1 | Réalisation Massif BAC -- A VALIDER AVEC TRAVAUX SPIE |  | 3d | 2026-07-27 | 2026-07-29 |  |  |  |  | 100d | 0d | start no earlier than 2026-07-27 | CABANIE | 24h | 10 | AT |
| 122 | 1.2.1.6.2 | Pose des charpentes + MALT -- A VALIDER AVEC TRAVAUX SPIE |  | 2d | 2026-07-30 | 2026-07-31 | 121 |  |  |  | 100d |  |  | OMEXOM | 16h | 10 | AT |
| 123 | 1.2.1.6.3 | Circuit de terre |  | 1d? | 2009-09-21 | 2009-09-21 |  |  |  |  | 4500d |  |  | ST GC; OMEXOM | 16h | 5 | AT |
| 124 | 1.2.1.6.4 | Pose armoire comptage et structure d'acceuil |  | 5d | 2026-11-16 | 2026-11-20 |  |  |  |  | 0d |  | start no earlier than 2026-11-16 | OMEXOM | 40h | 7 | AT |
| 125 | 1.2.1.6.5 | Déroulage et raccordement liaisons BT et FO |  | 3d | 2026-11-23 | 2026-11-25 | 124 |  |  |  | 0d |  |  | OMEXOM | 24h | 7 | AT |
| 126 | 1.2.1.6.6 | Raccordements liaisons FO coffrets WCT2 - Cahier de recette |  | 5d | 2026-11-26 | 2026-12-02 | 125 |  |  |  | 12d |  | start no earlier than 2025-12-15 | ST FO OMEXOM | 40h | 7 | AT |
| 127 | 1.2.1.6.7 | Raccordements câbles BT tores |  | 2d | 2026-11-26 | 2026-11-27 | 125 |  |  |  | 0d |  | start no earlier than 2022-10-24 | OMEXOM | 16h | 7 | AT |
| 128 | 1.2.1.6.8 | Annexe B - Déclaration d'achément des travaux | milestone | 0d | 2026-11-27 | 2026-11-27 | 127 | 2007-05-30 | 2007-07-10 | 30d | 0d |  | start no earlier than 2011-05-27 | OMEXOM |  | 7 | ANNEXE B |
| 129 | 1.2.1.6.9 | Réception armoire client + essais Diff C |  | 5d | 2026-11-30 | 2026-12-04 | 128 |  |  |  | 10d |  | finish no earlier than 2026-12-04 | EMASI | 40h | 10 |  |
| 130 | 1.2.1.6.10 | Réception Armoire comptage hors LEX |  | 5d | 2026-11-30 | 2026-12-04 | 128 |  |  |  | 10d |  | finish no earlier than 2026-12-04 | EMASI | 40h | 10 |  |
| 131 | 1.2.1.6.11 | Essai en commun ENGIE |  | 4d | 2026-12-14 | 2026-12-17 |  |  |  |  | 1d |  | start no earlier than 2026-12-14 | EMASI; ENGIE | 64h | 10 |  |
| 132 | 1.2.1.6.12 | Injection LEX comptage |  | 4d | 2026-12-14 | 2026-12-17 |  |  |  |  | 1d |  | finish no earlier than 2026-12-17 | EMASI; ENGIE | 64h | 10 |  |
| 134 | 1.2.1.7 | Mise en conduite DEBENAS 225kV |  | 1d | 2026-12-04 | 2026-12-04 | 93 |  |  |  | 0d |  | finish no earlier than 2026-06-30 |  |  |  |  |
