| id | category_id | title | description | priority | due_date | assignee | position | start_date | duration_days | tag | created_at | progress | status | milestones | updated_at |
| --- | --- | --- | --- | --- | --- | --- | --- | --- | --- | --- | --- | --- | --- | --- | --- |
| 290 | 123 | Etude DTA V1 | Rédaction CCTP Amiante en cours | normal | 2026-03-25 | SORAGNA Thomas | 0 | 2026-03-24 | 1 | CTF, CTRP, PTF, Etudes préliminaires - DCT | 2026-03-24T13:54:38.570Z | 19 | in_progress | 1774454973173 24/03/2026 : Rédaction CCTP , 1774455011280 25/03/2026 : Envoi CCTP (AC Environnement)  | 2026-03-25T16:10:36.412Z |
| 291 | 124 | Chiffrage | Chiffrer déplacement fosse déportée pour Sophie MOLLAT (PTF) | normal | 2026-03-26 | DURAND Eric | 0 | 2026-03-25 | 1 | CTF, CTRP, PTF, Etudes préliminaires - DCT | 2026-03-24T14:07:41.680Z | 0 | todo |  | 2026-03-24T14:08:29.626Z |
| 292 | 125 | Etude 3D | Commande scan 3D en cours de réalisation, rendu estimé pour début avril | normal | 2026-04-05 | LARBI Vincent | 0 | 0002-04-04 | 1 |  | 2026-03-24T14:10:59.165Z | 54 | waiting | 1774455921742 16/03/2026 : Signature commande BV  | 2026-03-25T16:26:30.643Z |
| 293 | 126 | Etude de sol | Pollution ? | normal |  | DURAND Eric | 0 |  | 1 | CTF, CTRP, PTF, Etudes préliminaires - DCT | 2026-03-24T14:21:01.387Z | 15 | in_progress | 1774362420781 Rédaction CCTP , 1774362434902 Validation CCTP par Référent  | 2026-03-30T18:28:04.954Z |
| 294 | 127 | Etude d'itinéraire convoi (création et veille) |  | normal | 2025-09-17 | DURAND Eric | 0 |  | 52.5 | CTF, CTRP, PTF, Etudes préliminaires - DCT | 2026-03-24T14:21:01.802Z | 100 | todo |  | 2026-03-24T14:46:59.408Z |
| 295 | 128 | CNER-Finalisation Etude d'itinéraire convoi | Validation de la commande par Felix | normal | 2025-09-23 | DURAND Eric | 0 | 0002-08-05 | 35 | CTF, CTRP, PTF, Etudes préliminaires - DCT | 2026-03-24T14:21:02.217Z | 0 | todo | 1774363700210 Demande faite pour déposer la demande d'autorisation True 2025-11-05 | 2026-03-30T07:22:46.044Z |
| 296 | 129 | Chiffrage | Finaliser la partie ajout des BO entre futurs BO et grille | high | 2026-03-27 | DURAND Eric | 0 | 2026-03-26 | 1 | CTF, CTRP, PTF, Etudes préliminaires - DCT | 2026-03-24T14:21:02.648Z | 90 | in_progress | 1774363311243 Shéma POSCHU & POPGBASE -> ok Julien True 2026-03-05, 1774363267674 Chiffrage solution phases mixtes True 2026-03-09 | 2026-03-30T07:26:48.395Z |
| 297 | 130 | CTF volet technico-économiques | Compléter la CTF / - /!\ Revue patrimoniale / Problématique fosse déportée: (Teams du 30/03) / Dossier loi sur l'eau 2012-> Préco Techniques (cf Etudes Hydrau) : / -> Bassin de rétention x2 / -> Fosse Déportée de 120m3 pour récupérer les eaux polluées (incendie) / -> Séparateur hydrocarbure supplémentaire à la FD / Générique : / -> calcul FD existant doit récupérer le plus gros volume du plus gros TR / -> FD actuelle : 60m3 pour 160MVA -> A prévoir volume pour 240MVA (80/100 ?) / -> Etude hydro -> surfaces imperméabilisées -> nbre de litres d'eau lors de fortes / pluies (débit d'eau max40 l/s) / -> Quel volume d'eau de rejet est autorisé ? (Loi sur l'eau / Gestion incident: / -> Gestion des eaux pompiers (2H lance = 120m3 eaux pompiers) / -> Huile + eau => 120 + 80/100 => bassin de rétention (volume cible 800m3) + guillotine / Infiltration partielle -> Quel volume d'eau de rejet est autorisé ? / /!\ le séparateur d'hydrocarbure qui doit être shuntable | high | 2026-04-02 | DURAND Eric | 0 | 2026-03-13 | 15 | CTF, CTRP, PTF, Etudes préliminaires - DCT | 2026-03-24T14:21:03.080Z | 26 | in_progress | 1774856345317 Préparer élément TR (In) pour Eric (Teams du30/03)  2026-04-03 1, 1774855546427 Préparer relecture par Bertrand  2026-04-06 1 | 2026-03-30T15:29:57.664Z |
| 298 | 131 | Etude Icc | Etude Icc demandé par email par Mathieu + Sharepoint | normal | 2026-05-03 | DURAND Eric | 0 | 2026-03-23 | 30 |  | 2026-03-24T14:22:43.095Z | 21 | waiting | 1774362279325 Demande par mail -> Mathieu True 2026-02-12, 1774362249768 Demande sur Sharepoint True 2026-03-23 | 2026-03-30T07:24:57.835Z |
| 299 | 132 | DO |  | normal |  |  | 0 | 2024-10-29 | 1 | Concertation, DO, Etudes pré-décisionnelles | 2026-03-24T14:32:45.766Z | 100 | done |  | 2026-03-24T14:33:33.030Z |
| 300 | 133 | Validation CCF V0 |  | normal | 2026-02-12 | VELLERE Benoit | 0 |  | 21 | Concertation, DO, Etudes pré-décisionnelles | 2026-03-24T14:34:11.486Z | 100 | done |  | 2026-03-24T14:35:01.265Z |
| 301 | 134 | Classification de l'ouvrage | Plusieurs échanges mais validation du passage du site de D4 à D2 (potentiellement D1 mais abandonné) -> Laurent DUBOURG | normal | 2025-12-25 | VELLERE Benoit | 0 |  | 1 | Concertation, DO, Etudes pré-décisionnelles | 2026-03-24T14:34:12.113Z | 100 | done |  | 2026-03-24T14:50:00.565Z |
| 302 | 135 | Mise à jour Base Patrimoniale | Préparer la revue Patrimoniale pour réunion de 15h30 à 16h30 / - Fichier excel à compléter | normal | 2026-04-27 | DURAND Eric | 0 | 2026-04-24 | 1 | CTF, CTRP, PTF, Etudes préliminaires - DCT | 2026-03-24T14:35:51.896Z | 7 | in_progress |  | 2026-03-25T16:36:49.656Z |
| 303 | 136 | Phasage travaux |  | normal |  |  | 0 |  | 0 | CTF, CTRP, PTF, Etudes préliminaires - DCT | 2026-03-24T14:35:52.307Z |  |  |  |  |
| 304 | 137 | Planning Projet |  | normal |  |  | 0 |  | 1 | CTF, CTRP, PTF, Etudes préliminaires - DCT | 2026-03-24T14:35:52.723Z |  |  |  |  |
| 305 | 138 | Moyens Spéciaux (faisabilité) |  | normal |  |  | 0 |  | 0 | CTF, CTRP, PTF, Etudes préliminaires - DCT | 2026-03-24T14:35:53.155Z |  |  |  |  |
| 306 | 139 | Point Consignation SPC |  | normal |  |  | 0 |  | 1 | CTF, CTRP, PTF, Etudes préliminaires - DCT | 2026-03-24T14:35:53.588Z |  |  |  |  |
| 307 | 140 | DT |  | normal |  |  | 0 |  | 1 | CTF, CTRP, PTF, Etudes préliminaires - DCT | 2026-03-24T14:35:54.212Z |  |  |  |  |
| 308 | 141 | IST |  | normal |  |  | 0 |  | 1 | DTT, Travaux | 2026-03-24T14:35:54.619Z |  |  |  |  |
| 309 | 142 | PPE V1 |  | normal |  |  | 0 |  | 1 | DTT, Travaux | 2026-03-24T14:35:55.041Z |  |  |  |  |
| 310 | 143 | Revue de sécurité Amont |  | normal |  |  | 0 |  | 1 | DTT, Travaux | 2026-03-24T14:35:55.459Z |  |  |  |  |
| 311 | 144 | DICT |  | normal |  |  | 0 |  | 1 | DTT, Travaux | 2026-03-24T14:35:55.878Z |  |  |  |  |
| 312 | 145 | PPE V2 |  | normal |  |  | 0 |  | 1 | DTT, Travaux | 2026-03-24T14:35:56.297Z |  |  |  |  |
| 313 | 146 | Choix du Décrêt |  | normal |  |  | 0 |  | 1 | CTF, CTRP, PTF, Etudes préliminaires - DCT | 2026-03-24T14:35:56.922Z |  |  |  |  |
| 314 | 147 | Validation CTF_Projet | Relecture Bertrand - Dates à respecter | high | 2026-05-04 | DEHER Bertrand | 0 | 2026-04-06 | 20 | CTF, CTRP, PTF, Etudes préliminaires - DCT | 2026-03-24T14:35:57.338Z | 0 | todo |  | 2026-03-25T18:06:40.309Z |
| 315 | 148 | Rédaction DCT |  | high | 2026-06-09 | VELLERE Benoit | 0 | 2026-05-01 | 26.5 | CTF, CTRP, PTF, Etudes préliminaires - DCT | 2026-03-24T14:35:57.754Z | 0 | todo |  | 2026-03-25T17:59:02.638Z |
| 316 | 149 | Dépôt |  | normal |  |  | 0 |  | 1 | CTF, CTRP, PTF, Etudes préliminaires - DCT | 2026-03-24T14:35:58.171Z |  |  |  |  |
| 317 | 150 | Passage en CCE AVIS |  | normal |  |  | 0 |  | 0 | CTF, CTRP, PTF, Etudes préliminaires - DCT | 2026-03-24T14:35:58.587Z |  |  |  |  |
| 318 | 151 | Passage en RRR - DCT |  | high | 2026-06-05 | VELLERE Benoit | 0 | 2026-06-04 | 1 | CTF, CTRP, PTF, Etudes préliminaires - DCT | 2026-03-24T14:35:59.009Z | 0 | todo |  | 2026-03-24T14:45:36.772Z |
| 319 | 152 | Passage en CCE Validation |  | high | 2026-06-11 | VELLERE Benoit | 0 | 2026-06-10 | 1 | CTF, CTRP, PTF, Etudes préliminaires - DCT | 2026-03-24T14:35:59.430Z | 0 | todo |  | 2026-03-24T14:45:25.117Z |
| 320 | 153 | Passage en CNI |  | normal |  |  | 0 |  | 0 | CTF, CTRP, PTF, Etudes préliminaires - DCT | 2026-03-24T14:35:59.848Z |  |  |  |  |
| 321 | 154 | Validation DCT |  | high | 2026-07-21 | VELLERE Benoit | 0 |  | 1 | CTF, CTRP, PTF, Etudes préliminaires - DCT | 2026-03-24T14:36:00.269Z | 0 | todo |  | 2026-03-24T14:45:05.557Z |
| 322 | 155 | Présentation CTF au GMR |  | high | 2026-07-07 | VELLERE Benoit | 0 | 2026-07-07 | 1 | CTF, CTRP, PTF, Etudes préliminaires - DCT | 2026-03-24T14:36:00.675Z | 0 | todo |  | 2026-03-25T16:02:41.752Z |
| 323 | 156 | Finalisation CCF V1 |  | normal |  |  | 0 |  | 1 | CTF, CTRP, PTF, Etudes préliminaires - DCT | 2026-03-24T14:36:01.094Z |  |  |  |  |
| 324 | 157 | Rédaction CCTP |  | normal | 2026-08-18 | DURAND Eric | 0 | 2026-07-22 | 19 | CCTP, consultations | 2026-03-24T14:53:14.484Z | 0 | todo |  | 2026-03-30T18:27:09.233Z |
| 325 | 158 | Soumission Offre technique Entreprise |  | normal | 2026-10-13 | VELLERE Benoit | 0 | 2026-08-19 | 39 | CCTP, consultations | 2026-03-24T14:53:14.891Z | 0 | todo |  | 2026-03-24T15:03:18.256Z |
| 326 | 159 | Négociation |  | normal | 2026-12-08 | VELLERE Benoit | 0 | 2026-10-14 | 39 | CCTP, consultations | 2026-03-24T14:53:15.298Z | 0 | todo |  | 2026-03-24T15:05:01.682Z |
| 327 | 160 | Contractualisation Etude |  | normal | 2026-12-22 | VELLERE Benoit | 0 |  | 9 | CCTP, consultations | 2026-03-24T14:53:15.731Z | 0 | todo |  | 2026-03-24T15:05:39.220Z |
| 328 | 161 | Etude V1 |  | normal | 2027-06-08 | DURAND Eric | 0 |  | 105 | Etudes V1, V2, APD, DI, Conv Racc | 2026-03-24T14:53:16.365Z | 0 | todo |  | 2026-03-24T14:54:44.553Z |
| 329 | 162 | Contrôle Etude V1 |  | normal |  |  | 0 |  | 9 | Etudes V1, V2, APD, DI, Conv Racc | 2026-03-24T14:53:16.801Z |  |  |  |  |
| 330 | 163 | Etude V2 |  | normal | 2027-11-23 | DURAND Eric | 0 |  | 87.5 | Etudes V1, V2, APD, DI, Conv Racc | 2026-03-24T14:53:17.230Z | 0 | todo |  | 2026-03-24T14:55:11.022Z |
| 331 | 164 | Contrôle Etude V2 |  | normal |  |  | 0 |  | 9 | Etudes V1, V2, APD, DI, Conv Racc | 2026-03-24T14:53:17.665Z |  |  |  |  |
| 332 | 165 | DTT |  | normal | 2028-02-15 | DURAND Eric | 0 |  | 52.5 | Etudes V1, V2, APD, DI, Conv Racc | 2026-03-24T14:53:18.085Z | 0 | todo |  | 2026-03-24T14:55:39.417Z |
| 333 | 166 | Contrôle DTT |  | normal |  |  | 0 |  | 9 | Etudes V1, V2, APD, DI, Conv Racc | 2026-03-24T14:53:18.498Z |  |  |  |  |
| 334 | 167 | PAQE Etudes |  | normal |  |  | 0 |  | 1 | Etudes V1, V2, APD, DI, Conv Racc | 2026-03-24T14:53:18.914Z |  |  |  |  |
| 335 | 168 | Validation Dossier BPE |  | normal |  |  | 0 |  | 1 | Etudes V1, V2, APD, DI, Conv Racc | 2026-03-24T14:53:19.347Z |  |  |  |  |
| 336 | 169 | Validation Dossier EDD |  | normal |  |  | 0 |  | 1 | Etudes V1, V2, APD, DI, Conv Racc | 2026-03-24T14:53:19.985Z |  |  |  |  |
| 337 | 170 | Rédaction DI |  | normal |  |  | 0 |  | 9 | Etudes V1, V2, APD, DI, Conv Racc | 2026-03-24T14:53:20.397Z |  |  |  |  |
| 338 | 171 | Passage en RRR-DI |  | normal |  |  | 0 |  | 0 | Etudes V1, V2, APD, DI, Conv Racc | 2026-03-24T14:53:20.814Z |  |  |  |  |
| 339 | 172 | Passage en CRP |  | normal |  |  | 0 |  | 0 | Etudes V1, V2, APD, DI, Conv Racc | 2026-03-24T14:53:21.242Z |  |  |  |  |
| 340 | 173 | Passage en CNI-DI |  | normal |  |  | 0 |  | 0 | Etudes V1, V2, APD, DI, Conv Racc | 2026-03-24T14:53:21.664Z |  |  |  |  |
| 341 | 174 | Réunion de Lancement |  | normal |  |  | 0 |  | 4.5 | Etudes V1, V2, APD, DI, Conv Racc | 2026-03-24T14:53:22.081Z |  |  |  |  |
| 342 | 174 | Envoi des documents par RTE |  | normal |  |  | 1 |  | 4.5 | Etudes V1, V2, APD, DI, Conv Racc | 2026-03-24T14:53:22.296Z |  |  |  |  |
| 343 | 174 | Rédaction du Rapport d'Alerte par L'auditeur |  | normal |  |  | 2 |  | 9 | Etudes V1, V2, APD, DI, Conv Racc | 2026-03-24T14:53:22.512Z |  |  |  |  |
| 344 | 174 | Sessions d'Expertise |  | normal |  |  | 3 |  | 13 | Etudes V1, V2, APD, DI, Conv Racc | 2026-03-24T14:53:22.717Z |  |  |  |  |
| 345 | 174 | Rédaction du Rapport Préliminaires par L'auditeur |  | normal |  |  | 4 |  | 13 | Etudes V1, V2, APD, DI, Conv Racc | 2026-03-24T14:53:22.929Z |  |  |  |  |
| 346 | 174 | Envoi des remarques de RTE |  | normal |  |  | 5 |  | 9 | Etudes V1, V2, APD, DI, Conv Racc | 2026-03-24T14:53:23.136Z |  |  |  |  |
| 347 | 174 | Rédaction du Rapport Final par l'Auditeur |  | normal |  |  | 6 |  | 4.5 | Etudes V1, V2, APD, DI, Conv Racc | 2026-03-24T14:53:23.341Z |  |  |  |  |
| 348 | 175 | Validation DI |  | normal |  |  | 0 |  | 0 | Etudes V1, V2, APD, DI, Conv Racc | 2026-03-24T14:53:23.761Z |  |  |  |  |
| 349 | 176 | AT761 & Self 80MVar |  | normal | 2030-03-26 | DURAND Eric | 0 |  | 840 |  | 2026-03-24T14:53:24.379Z | 0 | todo |  | 2026-03-24T14:56:51.919Z |
| 350 | 177 | TR732 & TR733 |  | normal | 2030-03-26 | DURAND Eric | 0 |  | 840 |  | 2026-03-24T14:53:24.809Z | 0 | todo |  | 2026-03-24T14:58:18.783Z |
| 351 | 178 | Date limite commande C |  | normal |  |  | 0 |  | 0 |  | 2026-03-24T14:53:25.228Z |  |  |  |  |
| 352 | 179 | Rédaction CCTP |  | normal |  |  | 0 |  | 17.5 | CCTP, consultations | 2026-03-24T14:53:25.840Z |  |  |  |  |
| 353 | 180 | Soumission Offre technique Entreprise |  | normal |  |  | 0 |  | 35 | CCTP, consultations | 2026-03-24T14:53:26.258Z |  |  |  |  |
| 354 | 181 | Négociation |  | normal |  |  | 0 |  | 35 | CCTP, consultations | 2026-03-24T14:53:26.677Z |  |  |  |  |
| 355 | 182 | Contractualisation Travaux |  | normal |  |  | 0 |  | 9 | DTT, Travaux | 2026-03-24T14:53:27.088Z |  |  |  |  |
| 356 | 183 | Go/No GO Travaux |  | normal |  |  | 0 |  | 1 | DTT, Travaux | 2026-03-24T14:53:27.496Z |  |  |  |  |
| 357 | 184 | PAQE Travaux |  | normal |  |  | 0 |  | 1 | DTT, Travaux | 2026-03-24T14:53:28.110Z |  |  |  |  |
| 358 | 185 | Dossiers BPE |  | normal |  |  | 0 |  | 1 | DTT, Travaux | 2026-03-24T14:53:28.519Z |  |  |  |  |
| 359 | 186 | Mise à jour des Bases de Données |  | normal |  |  | 0 |  | 1 | DTT, Travaux | 2026-03-24T14:53:28.926Z |  |  |  |  |

| id | category_id | title | description | priority | due_date | assignee | position | start_date | duration_days | tag | created_at | progress | status | milestones | updated_at |
| --- | --- | --- | --- | --- | --- | --- | --- | --- | --- | --- | --- | --- | --- | --- | --- |
| 360 | 187 | DUEM (Dossier d'Utilisation d'Exploitation et de Maintenance) |  | normal |  |  | 0 |  | 1 | DTT, Travaux | 2026-03-24T14:53:29.359Z |  |  |  |  |
| 361 | 188 | DIUO ( Dossier d'Intervention Ultérieure sur l'Ouvrage) |  | normal |  |  | 0 |  | 1 | DTT, Travaux | 2026-03-24T14:53:29.783Z |  |  |  |  |
| 362 | 189 | Annexes |  | normal |  |  | 0 |  | 1 | DTT, Travaux | 2026-03-24T14:53:30.202Z |  |  |  |  |
| 363 | 190 | MES intégrale Projet |  | normal |  |  | 0 |  | 0 |  | 2026-03-24T14:53:30.838Z |  |  |  |  |
| 364 | 191 | Documents CAE BT ( < 4 mois ) |  | normal |  |  | 0 |  | 1 | Concertation, DO, Etudes pré-décisionnelles | 2026-03-24T14:53:31.472Z |  |  |  |  |
| 365 | 192 | Dossier Bilan Projet |  | normal |  |  | 0 |  | 52.5 | Concertation, DO, Etudes pré-décisionnelles | 2026-03-24T14:53:32.124Z |  |  |  |  |
| 366 | 193 | Bilan Projet |  | normal |  |  | 0 |  | 0 |  | 2026-03-24T14:53:32.775Z |  |  |  |  |
| 367 | 194 | Autres matériels |  | normal |  |  | 0 |  | 1 |  | 2026-03-24T14:59:17.994Z |  |  |  |  |
| 368 | 195 | Mise à jour Base Patrimoniale |  | normal |  |  | 0 |  | 1 | CTF, CTRP, PTF, Etudes préliminaires - DCT | 2026-03-25T15:24:20.966Z |  |  |  |  |
| 369 | 196 | Phasage travaux |  | normal |  |  | 0 |  | 0 | CTF, CTRP, PTF, Etudes préliminaires - DCT | 2026-03-25T15:24:21.372Z |  |  |  |  |
| 370 | 197 | Planning Projet |  | normal |  |  | 0 |  | 1 | CTF, CTRP, PTF, Etudes préliminaires - DCT | 2026-03-25T15:24:21.789Z |  |  |  |  |
| 371 | 199 | Point Consignation SPC | Plateau Consignation de 10h à 11h | normal | 2026-04-03 | DURAND Eric | 0 | 2026-04-03 | 1 | CTF, CTRP, PTF, Etudes préliminaires - DCT | 2026-03-25T15:24:22.416Z | 0 | todo |  | 2026-03-25T16:07:19.532Z |
| 372 | 201 | Validation CTF_Projet |  | normal |  |  | 0 |  | 1 | CTF, CTRP, PTF, Etudes préliminaires - DCT | 2026-03-25T15:24:23.281Z |  |  |  |  |
| 373 | 202 | Rédaction DCT |  | normal |  |  | 0 |  | 26.5 | CTF, CTRP, PTF, Etudes préliminaires - DCT | 2026-03-25T15:24:23.714Z |  |  |  |  |
| 374 | 203 | Dépôt |  | normal |  |  | 0 |  | 1 | CTF, CTRP, PTF, Etudes préliminaires - DCT | 2026-03-25T15:24:24.145Z |  |  |  |  |
| 375 | 204 | Passage en CCE AVIS |  | normal |  |  | 0 |  | 0 | CTF, CTRP, PTF, Etudes préliminaires - DCT | 2026-03-25T15:24:24.563Z |  |  |  |  |
| 376 | 205 | Passage en RRR - DCT |  | normal |  |  | 0 |  | 0 | CTF, CTRP, PTF, Etudes préliminaires - DCT | 2026-03-25T15:24:24.998Z |  |  |  |  |
| 377 | 206 | Passage en CCE Validation |  | normal |  |  | 0 |  | 0 | CTF, CTRP, PTF, Etudes préliminaires - DCT | 2026-03-25T15:24:25.430Z |  |  |  |  |
| 378 | 207 | Passage en CNI |  | normal |  |  | 0 |  | 0 | CTF, CTRP, PTF, Etudes préliminaires - DCT | 2026-03-25T15:24:25.863Z |  |  |  |  |
| 379 | 208 | Validation DCT |  | normal |  |  | 0 |  | 0 | CTF, CTRP, PTF, Etudes préliminaires - DCT | 2026-03-25T15:24:26.280Z |  |  |  |  |
| 380 | 209 | Présentation CTF au GMR |  | normal |  |  | 0 |  | 1 | CTF, CTRP, PTF, Etudes préliminaires - DCT | 2026-03-25T15:24:26.704Z |  |  |  |  |
| 381 | 210 | Finalisation CCF V1 |  | normal |  |  | 0 |  | 1 | CTF, CTRP, PTF, Etudes préliminaires - DCT | 2026-03-25T15:24:27.121Z |  |  |  |  |
| 382 | 211 | DT |  | normal |  |  | 0 |  | 1 | CTF, CTRP, PTF, Etudes préliminaires - DCT | 2026-03-25T15:24:27.743Z |  |  |  |  |
| 383 | 212 | IST |  | normal |  |  | 0 |  | 1 | DTT, Travaux | 2026-03-25T15:24:28.174Z |  |  |  |  |
| 384 | 213 | PPE V1 |  | normal |  |  | 0 |  | 1 | DTT, Travaux | 2026-03-25T15:24:28.596Z |  |  |  |  |
| 385 | 214 | Revue de sécurité Amont |  | normal |  |  | 0 |  | 1 | DTT, Travaux | 2026-03-25T15:24:29.012Z |  |  |  |  |
| 386 | 215 | DICT |  | normal |  |  | 0 |  | 1 | DTT, Travaux | 2026-03-25T15:24:29.429Z |  |  |  |  |
| 387 | 216 | PPE V2 |  | normal |  |  | 0 |  | 1 | DTT, Travaux | 2026-03-25T15:24:29.858Z |  |  |  |  |
| 388 | 217 | Rédaction CCTP |  | normal |  | DURAND Eric | 0 |  | 17.5 | CCTP, consultations | 2026-03-25T15:24:30.495Z | 100 | done |  | 2026-03-25T15:56:10.874Z |
| 389 | 218 | Soumission Offre technique Entreprise | Commande dispo pour Anne-Isabelle | high | 2026-03-29 | DURAND Eric | 0 | 2026-02-09 | 35 | CCTP, consultations | 2026-03-25T15:24:30.927Z | 12 | waiting | 1774880426421 PPE True 2026-01-09 1, 1774454204842 Demande création commande True 2026-03-25, 1774880445124 Revue de sécurité Amont True 2026-03-27 1, 1774880408965 Plan Qualité Etudes True 2026-03-27 1, 1774855463995 En attente commande signée - AI (30/03/26)  2026-04-03 1 | 2026-03-30T14:24:25.770Z |
| 390 | 219 | Négociation |  | normal |  |  | 0 |  | 35 | CCTP, consultations | 2026-03-25T15:24:31.361Z |  |  |  |  |
| 391 | 220 | Contractualisation Etude |  | normal |  |  | 0 |  | 9 | CCTP, consultations | 2026-03-25T15:24:31.792Z |  |  |  |  |
| 392 | 221 | Etude V1 |  | normal |  |  | 0 |  | 105 | Etudes V1, V2, APD, DI, Conv Racc | 2026-03-25T15:24:32.441Z |  |  |  |  |
| 393 | 222 | Contrôle Etude V1 |  | normal |  |  | 0 |  | 9 | Etudes V1, V2, APD, DI, Conv Racc | 2026-03-25T15:24:32.875Z |  |  |  |  |
| 394 | 223 | Etude V2 |  | normal |  |  | 0 |  | 87.5 | Etudes V1, V2, APD, DI, Conv Racc | 2026-03-25T15:24:33.310Z |  |  |  |  |
| 395 | 224 | Contrôle Etude V2 |  | normal |  |  | 0 |  | 9 | Etudes V1, V2, APD, DI, Conv Racc | 2026-03-25T15:24:33.744Z |  |  |  |  |
| 396 | 225 | DTT |  | normal |  |  | 0 |  | 52.5 | Etudes V1, V2, APD, DI, Conv Racc | 2026-03-25T15:24:34.176Z |  |  |  |  |
| 397 | 226 | Contrôle DTT |  | normal |  |  | 0 |  | 9 | Etudes V1, V2, APD, DI, Conv Racc | 2026-03-25T15:24:34.609Z |  |  |  |  |
| 398 | 227 | PAQE Etudes |  | normal |  |  | 0 |  | 1 | Etudes V1, V2, APD, DI, Conv Racc | 2026-03-25T15:24:35.021Z |  |  |  |  |
| 399 | 228 | Validation Dossier BPE |  | normal |  |  | 0 |  | 1 | Etudes V1, V2, APD, DI, Conv Racc | 2026-03-25T15:24:35.453Z |  |  |  |  |
| 400 | 229 | Validation Dossier EDD |  | normal |  |  | 0 |  | 1 | Etudes V1, V2, APD, DI, Conv Racc | 2026-03-25T15:24:36.087Z |  |  |  |  |
| 401 | 230 | Rédaction DI |  | normal |  |  | 0 |  | 9 | Etudes V1, V2, APD, DI, Conv Racc | 2026-03-25T15:24:36.521Z |  |  |  |  |
| 402 | 231 | Passage en RRR-DI |  | normal |  |  | 0 |  | 0 | Etudes V1, V2, APD, DI, Conv Racc | 2026-03-25T15:24:36.931Z |  |  |  |  |
| 403 | 232 | Passage en CRP |  | normal |  |  | 0 |  | 0 | Etudes V1, V2, APD, DI, Conv Racc | 2026-03-25T15:24:37.340Z |  |  |  |  |
| 404 | 233 | Passage en CNI-DI |  | normal |  |  | 0 |  | 0 | Etudes V1, V2, APD, DI, Conv Racc | 2026-03-25T15:24:37.749Z |  |  |  |  |
| 405 | 234 | Réunion de Lancement |  | normal |  |  | 0 |  | 4.5 | Etudes V1, V2, APD, DI, Conv Racc | 2026-03-25T15:24:38.157Z |  |  |  |  |
| 406 | 234 | Envoi des documents par RTE |  | normal |  |  | 1 |  | 4.5 | Etudes V1, V2, APD, DI, Conv Racc | 2026-03-25T15:24:38.361Z |  |  |  |  |
| 407 | 234 | Rédaction du Rapport d'Alerte par L'auditeur |  | normal |  |  | 2 |  | 9 | Etudes V1, V2, APD, DI, Conv Racc | 2026-03-25T15:24:38.565Z |  |  |  |  |
| 408 | 234 | Sessions d'Expertise |  | normal |  |  | 3 |  | 13 | Etudes V1, V2, APD, DI, Conv Racc | 2026-03-25T15:24:38.773Z |  |  |  |  |
| 409 | 234 | Rédaction du Rapport Préliminaires par L'auditeur |  | normal |  |  | 4 |  | 13 | Etudes V1, V2, APD, DI, Conv Racc | 2026-03-25T15:24:38.987Z |  |  |  |  |
| 410 | 234 | Envoi des remarques de RTE |  | normal |  |  | 5 |  | 9 | Etudes V1, V2, APD, DI, Conv Racc | 2026-03-25T15:24:39.204Z |  |  |  |  |
| 411 | 234 | Rédaction du Rapport Final par l'Auditeur |  | normal |  |  | 6 |  | 4.5 | Etudes V1, V2, APD, DI, Conv Racc | 2026-03-25T15:24:39.422Z |  |  |  |  |
| 412 | 235 | Validation DI |  | normal | 2027-04-01 | GIRES Anne-Isabelle | 0 | 2027-04-01 | 0 | Etudes V1, V2, APD, DI, Conv Racc | 2026-03-25T15:24:39.839Z | 0 | todo |  | 2026-03-27T08:35:42.034Z |
| 413 | 236 | Etude DTA V1 |  | normal |  |  | 0 |  | 1 | CTF, CTRP, PTF, Etudes préliminaires - DCT | 2026-03-25T15:26:10.138Z |  |  |  |  |
| 414 | 237 | Etude de sol | Besoin d'une Etude G2 PRO pour le marché BI/BR | high | 2026-04-06 | DURAND Eric | 0 | 2026-04-24 | 1 | CTF, CTRP, PTF, Etudes préliminaires - DCT | 2026-03-25T15:26:10.573Z | 0 | todo |  | 2026-03-25T18:40:07.692Z |
| 415 | 240 | Chiffrage | Chiffrage ECV 2025: 617 808 € / Chiffrage ECV 2026: 714 303 € | normal | 2026-03-25 | DURAND Eric | 0 | 2026-03-24 | 1 | CTF, CTRP, PTF, Etudes préliminaires - DCT | 2026-03-25T15:26:11.438Z | 100 | done |  | 2026-03-25T15:44:10.670Z |
| 416 | 241 | CTF volet technico-économiques |  | normal |  |  | 0 |  | 264.5 | CTF, CTRP, PTF, Etudes préliminaires - DCT | 2026-03-25T15:26:11.871Z |  |  |  |  |
| 417 | 243 | Etude DTA V1 |  | normal |  |  | 0 |  | 1 | CTF, CTRP, PTF, Etudes préliminaires - DCT | 2026-03-25T17:08:22.427Z |  |  |  |  |
| 418 | 244 | Etude de sol |  | normal |  |  | 0 |  | 1 | CTF, CTRP, PTF, Etudes préliminaires - DCT | 2026-03-25T17:08:22.837Z |  |  |  |  |
| 419 | 247 | Chiffrage |  | normal |  |  | 0 |  | 1 | CTF, CTRP, PTF, Etudes préliminaires - DCT | 2026-03-25T17:08:23.683Z |  |  |  |  |
| 420 | 248 | CTF volet technico-économiques |  | normal |  |  | 0 |  | 264.5 | CTF, CTRP, PTF, Etudes préliminaires - DCT | 2026-03-25T17:08:24.114Z |  |  |  |  |
| 421 | 250 | Poste de LA PERCHE |  | normal | 2025-06-10 |  | 0 | 2025-06-10 | 596 | CTF, CTRP, PTF, Etudes préliminaires - DCT | 2026-03-25T17:35:09.537Z |  |  |  |  |
| 422 | 251 | Consignation départ LATOUR DE CAROL 2025 - Fait |  | normal | 2025-11-27 |  | 0 | 2025-09-22 | 67 |  | 2026-03-25T17:35:09.947Z |  |  |  |  |
| 423 | 251 | Balisage de la zone de travail |  | normal | 2025-10-27 |  | 1 | 2025-10-27 | 1 |  | 2026-03-25T17:35:10.157Z |  |  |  |  |
| 424 | 251 | Travaux GC 2025 |  | normal | 2025-10-31 |  | 2 | 2025-10-28 | 3 |  | 2026-03-25T17:35:10.374Z |  |  |  |  |
| 425 | 251 | Travaux GC 2025 - (*) Ouverture tranchée FO |  | normal | 2025-10-29 |  | 3 | 2025-10-29 | 1 |  | 2026-03-25T17:35:10.591Z |  |  |  |  |
| 426 | 251 | Travaux GC 2025 - Passage fourreau FO |  | normal | 2025-10-30 |  | 4 | 2025-10-30 | 1 |  | 2026-03-25T17:35:10.807Z |  |  |  |  |
| 427 | 251 | Travaux GC 2025 - Fermeture tranchée |  | normal | 2025-10-31 |  | 5 | 2025-10-31 | 1 |  | 2026-03-25T17:35:11.013Z |  |  |  |  |
| 428 | 251 | Travaux FO 2025 |  | normal | 2025-11-12 |  | 6 | 2025-11-03 | 4 |  | 2026-03-25T17:35:11.225Z |  |  |  |  |
| 429 | 251 | Travaux FO 2025 - Raccordement tiroir 48FO liaison BI-WTC2 : raccordement des pigtails par soudure |  | normal | 2025-11-03 |  | 7 | 2025-11-03 | 1 |  | 2026-03-25T17:35:11.434Z |  |  |  |  |

| id | category_id | title | priority | due_date | position | start_date | duration_days | tag | created_at |
| --- | --- | --- | --- | --- | --- | --- | --- | --- | --- |
| 430 | 251 | Travaux FO 2025 - Raccordement d'un boîtier WTC2 sur portique, départ La Tour de Carol. | normal | 2025-11-04 | 8 | 2025-11-04 | 1 |  | 2026-03-25T17:35:11.641Z |
| 431 | 251 | Travaux FO 2025 - Raccordement d'un boîtier WTC2 sur portique, départ La Cassagne | normal | 2025-11-05 | 9 | 2025-11-05 | 1 |  | 2026-03-25T17:35:11.852Z |
| 432 | 251 | Travaux FO 2025 - Pose câble FO départ La Cassagne et La Tour de Carol : Ouverture et fermeture des caniveaux , pose câble FO et étiquettes de repérage | normal | 2025-11-06 | 10 | 2025-11-06 | 1 |  | 2026-03-25T17:35:12.057Z |
| 433 | 251 | Remise d'ouvrage 2025 | normal | 2026-01-27 | 11 | 2025-11-13 | 54 |  | 2026-03-25T17:35:12.273Z |
| 434 | 251 | Remise d'ouvrage 2025 - Déclaration achevement travaux et remise d'ouvrage | normal | 2025-11-13 | 12 | 2025-11-13 | 1 |  | 2026-03-25T17:35:12.477Z |
| 435 | 251 | Remise d'ouvrage 2025 - Saisie OIP et remise des plans minutes | normal | 2025-11-25 | 13 | 2025-11-25 | 1 |  | 2026-03-25T17:35:12.690Z |
| 436 | 251 | Remise d'ouvrage 2025 - Chargement BD (évolution tranche BR) | normal | 2025-11-26 | 14 | 2025-11-26 | 1 |  | 2026-03-25T17:35:12.899Z |
| 437 | 251 | Remise d'ouvrage 2025 - Réception d'ouvrage et controle de conformité | normal | 2025-11-26 | 15 | 2025-11-26 | 1 |  | 2026-03-25T17:35:13.106Z |
| 438 | 251 | Remise d'ouvrage 2025 - Déconsignation départ LATOUR DE CAROL 2025 | normal | 2025-11-27 | 16 | 2025-11-27 | 1 |  | 2026-03-25T17:35:13.317Z |
| 439 | 251 | Remise d'ouvrage 2025 - Remise plans CAE | normal | 2026-01-27 | 17 | 2025-11-27 | 44 |  | 2026-03-25T17:35:13.522Z |
| 440 | 252 | Consignation départ LATOUR DE CAROL 2026 | normal | 2026-04-30 | 0 | 2026-03-09 | 446 |  | 2026-03-25T17:35:13.939Z |
| 441 | 252 | Reouverture chantier + Balisage zone de travail | normal | 2026-04-29 | 1 | 2026-04-20 | 8 |  | 2026-03-25T17:35:14.154Z |
| 443 | 252 | Travaux FO 2026 - Pose et fixation de cordons duplex FO blindé pour TAC, étiquetage, raccordement et test | normal | 2026-04-29 | 3 | 2026-04-20 | 8 | Concertation, DO, Etudes pré-décisionnelles | 2026-03-25T17:35:14.562Z |
| 444 | 252 | Travaux FO 2026 - Contrôle et mesures de réflectométrie : Liaison 48FO La Perche - La Tour de Carol | normal | 2026-04-29 | 4 | 2026-04-20 | 8 |  | 2026-03-25T17:35:14.765Z |
| 445 | 252 | Travaux FO 2026 - Contrôle et mesures de réflectométrie : liaison 48FO La Perche - La Cassagne | normal | 2026-04-29 | 5 | 2026-04-20 | 8 |  | 2026-03-25T17:35:14.968Z |
| 447 | 252 | Travaux HT "2027" - Dépose liaison HT Ph3 | normal | 2027-12-31 | 7 | 2027-12-31 | 1 |  | 2026-03-25T17:35:15.379Z |
| 448 | 252 | Travaux HT "2027" - Dépose CB (et CHF) et Charpente | normal | 2027-12-31 | 8 | 2027-12-31 | 1 |  | 2026-03-25T17:35:15.587Z |
| 449 | 252 | Travaux HT "2027" - Reprise tendues Ph3 | normal | 2027-12-31 | 9 | 2027-12-31 | 1 |  | 2026-03-25T17:35:15.796Z |
| 450 | 252 | Travaux HT "2027" - Dépose anciens câbles BT | normal | 2027-12-31 | 10 | 2027-12-31 | 1 |  | 2026-03-25T17:35:15.999Z |
| 452 | 252 | Travaux GC "2027" - Arasement massif CB | normal | 2028-01-03 | 12 | 2027-12-31 | 2 |  | 2026-03-25T17:35:16.407Z |
| 454 | 252 | Communs Poste "2027" - Mise en place kit Anti-nuisibles | normal | 2027-12-31 | 14 | 2027-12-31 | 1 | CTF, CTRP, PTF, Etudes préliminaires - DCT | 2026-03-25T17:35:16.818Z |
| 456 | 252 | Remise d'ouvrage "2027" - Déclaration achevement travaux et remise d'ouvrage | normal | 2026-04-29 | 16 | 2026-04-29 | 1 |  | 2026-03-25T17:35:17.237Z |
| 457 | 252 | Remise d'ouvrage "2027" - Saisie OIP et remise des plans minutes | normal | 2027-12-31 | 17 | 2027-12-31 | 1 |  | 2026-03-25T17:35:17.441Z |
| 458 | 252 | Remise d'ouvrage "2027" - Remise plans CAE | normal | 2027-12-31 | 18 | 2027-12-31 | 1 |  | 2026-03-25T17:35:17.644Z |
| 459 | 252 | Remise d'ouvrage "2027" - Réception d'ouvrage et controle de conformité | normal | 2026-04-30 | 19 | 2026-04-29 | 2 |  | 2026-03-25T17:35:17.848Z |
| 460 | 252 | Remise d'ouvrage "2027" - Déconsignation départ LATOUR DE CAROL 2026 | normal | 2026-04-30 | 20 | 2026-04-30 | 1 |  | 2026-03-25T17:35:18.053Z |
| 461 | 252 | Remise d'ouvrage "2027" - Mise en conduite MEC | normal | 2026-04-30 | 21 | 2026-04-30 | 1 |  | 2026-03-25T17:35:18.265Z |
| 462 | 253 | Poste de LATOUR DE CAROL (SNCF) | normal | 2026-06-10 | 0 | 2026-03-09 | 476 | CTF, CTRP, PTF, Etudes préliminaires - DCT | 2026-03-25T17:35:18.888Z |
| 463 | 254 | Consignation départ LA PERCHE 2026 | normal | 2026-04-30 | 0 | 2026-03-09 | 39 |  | 2026-03-25T17:35:19.319Z |
| 464 | 255 | Mise en place de la base vie | normal | 2026-03-11 | 0 | 2026-03-09 | 3 |  | 2026-03-25T17:35:19.735Z |
| 465 | 256 | Balisage de la zone de travail | normal | 2026-03-09 | 0 | 2026-03-09 | 1 |  | 2026-03-25T17:35:20.152Z |
| 466 | 257 | Travaux HT 2026 Cellule LA PERCHE | normal | 2026-04-30 | 0 | 2026-03-09 | 32 |  | 2026-03-25T17:35:20.565Z |
| 467 | 257 | Dépose liaisons HT | normal | 2026-03-10 | 1 | 2026-03-10 | 1 |  | 2026-03-25T17:35:20.768Z |
| 468 | 257 | Dépose appareils SLT + CM et Charpentes | normal | 2026-03-13 | 2 | 2026-03-12 | 2 |  | 2026-03-25T17:35:20.973Z |
| 469 | 257 | (*) Pose Charpentes ST + CM + MALT | normal | 2026-04-01 | 3 | 2026-03-31 | 2 |  | 2026-03-25T17:35:21.178Z |
| 470 | 257 | (*) Pose appareils HT | normal | 2026-04-03 | 4 | 2026-04-02 | 2 |  | 2026-03-25T17:35:21.382Z |
| 471 | 257 | (*) Raccordement liasion BT | normal | 2026-04-02 | 5 | 2026-04-02 | 1 |  | 2026-03-25T17:35:21.585Z |
| 472 | 257 | Déroulage entée Poste (Portique La Perche) | normal | 2026-04-17 | 6 | 2026-04-03 | 11 | CTF, CTRP, PTF, Etudes préliminaires - DCT | 2026-03-25T17:35:21.801Z |
| 473 | 257 | (*) Raccordement liasion HT | normal | 2026-04-21 | 7 | 2026-04-20 | 2 |  | 2026-03-25T17:35:22.006Z |
| 474 | 257 | (*) Réglage ST | normal | 2026-04-22 | 8 | 2026-04-22 | 1 |  | 2026-03-25T17:35:22.217Z |
| 475 | 258 | Travaux BT 2026 Cellule LA PERCHE | normal | 2026-04-30 | 0 | 2026-03-09 | 15 |  | 2026-03-25T17:35:22.634Z |
| 476 | 258 | Dépose liaisons BT | normal | 2026-03-11 | 1 | 2026-03-11 | 1 |  | 2026-03-25T17:35:22.849Z |
| 477 | 258 | Déroulage nouveaux câbles BT + raccordement | normal | 2026-03-31 | 2 | 2026-03-30 | 2 |  | 2026-03-25T17:35:23.069Z |
| 478 | 259 | Travaux GC 2026 Cellule LA PERCHE | normal | 2026-04-24 | 0 | 2026-03-16 | 30 |  | 2026-03-25T17:35:23.487Z |
| 479 | 259 | Preparation armatures, crosses ancrage et gabarits | normal | 2026-03-17 | 1 | 2026-03-16 | 2 |  | 2026-03-25T17:35:23.701Z |
| 480 | 259 | Démolition massifs : SLT + CM (Prévoir evacuation gravats) | normal | 2026-03-19 | 2 | 2026-03-18 | 2 |  | 2026-03-25T17:35:23.916Z |
| 481 | 259 | Envoi point de convocation 1er coulage béton | normal | 2026-03-17 | 3 | 2026-03-17 | 1 |  | 2026-03-25T17:35:24.122Z |
| 482 | 259 | Ouverture fouille nouveaux massifs | normal | 2026-03-20 | 4 | 2026-03-20 | 1 |  | 2026-03-25T17:35:24.325Z |
| 483 | 259 | Coffrage massifs | normal | 2026-03-23 | 5 | 2026-03-23 | 1 |  | 2026-03-25T17:35:24.534Z |
| 484 | 259 | Coulage béton massifs : ST + CM (Prévoir réservations) | normal | 2026-03-24 | 6 | 2026-03-24 | 1 |  | 2026-03-25T17:35:24.742Z |
| 485 | 259 | Ouverture tranché FO dessous portique | normal | 2026-03-25 | 7 | 2026-03-25 | 1 |  | 2026-03-25T17:35:24.950Z |
| 486 | 259 | Passage fourreau FO | normal | 2026-03-26 | 8 | 2026-03-26 | 1 |  | 2026-03-25T17:35:25.162Z |
| 487 | 259 | Fermeture tranchée FO | normal | 2026-03-26 | 9 | 2026-03-26 | 1 |  | 2026-03-25T17:35:25.367Z |
| 488 | 259 | Envoi point de convocation pour réseau de terre | normal | 2026-03-25 | 10 | 2026-03-25 | 1 |  | 2026-03-25T17:35:25.570Z |
| 489 | 259 | Ouverture circuit de terre | normal | 2026-03-25 | 11 | 2026-03-25 | 1 |  | 2026-03-25T17:35:25.772Z |
| 490 | 259 | Déroulage RGT | normal | 2026-03-25 | 12 | 2026-03-25 | 1 |  | 2026-03-25T17:35:25.982Z |
| 491 | 259 | Raccordement RGT | normal | 2026-03-27 | 13 | 2026-03-26 | 2 |  | 2026-03-25T17:35:26.191Z |
| 492 | 259 | Fermeture tranchée | normal | 2026-03-26 | 14 | 2026-03-26 | 1 |  | 2026-03-25T17:35:26.399Z |
| 493 | 259 | (*) Réalisation sur-massifs | normal | 2026-04-24 | 15 | 2026-04-23 | 2 |  | 2026-03-25T17:35:26.608Z |
| 494 | 260 | Travaux FO 2026 | normal | 2026-04-29 | 0 | 2026-04-20 | 8 |  | 2026-03-25T17:35:27.027Z |
| 495 | 260 | Raccordement tiroir 48FO liaison BI-WTC2 : raccordement des pigtails par soudure | normal | 2026-04-29 | 1 | 2026-04-20 | 8 |  | 2026-03-25T17:35:27.231Z |
| 496 | 260 | Raccordement demi boîtier WTC2 existant sur portique, départ La Perche | normal | 2026-04-29 | 2 | 2026-04-20 | 8 | DTT, Travaux | 2026-03-25T17:35:27.448Z |
| 497 | 260 | (*) Raccordement d'un boîtier WTC2 sur portique, départ Porta | normal | 2026-04-29 | 3 | 2026-04-20 | 8 |  | 2026-03-25T17:35:27.664Z |
| 498 | 260 | Raccordement d'un boîtier WTC2 dans galerie, départ La Cassagne et Latour de Carol | normal | 2026-04-29 | 4 | 2026-04-20 | 8 |  | 2026-03-25T17:35:27.869Z |
| 499 | 260 | Pose câble FO départ Latour de Carol et Porta : Ouverture et fermeture des caniveaux , pose câble FO et étiquettes de repérage | normal | 2026-04-29 | 5 | 2026-04-20 | 8 |  | 2026-03-25T17:35:28.073Z |
| 500 | 260 | Pose et fixation de cordons duplex FO blindé pour TAC, étiquetage, raccordement et test | normal | 2026-04-29 | 6 | 2026-04-20 | 8 | Concertation, DO, Etudes pré-décisionnelles | 2026-03-25T17:35:28.278Z |
| 501 | 260 | Contrôle et mesures de réflectométrie : Liaison 48FO La Perche - La Tour de Carol | normal | 2026-04-29 | 7 | 2026-04-20 | 8 |  | 2026-03-25T17:35:28.480Z |
| 502 | 261 | Communs Poste | normal | 2026-04-24 | 0 | 2026-04-24 | 1 | CTF, CTRP, PTF, Etudes préliminaires - DCT | 2026-03-25T17:35:28.915Z |
| 503 | 261 | Mise en place kit Anti-nuisibles | normal | 2026-04-24 | 1 | 2026-04-24 | 1 |  | 2026-03-25T17:35:29.132Z |
| 504 | 262 | Remise d'ouvrage 2026 | normal | 2028-01-03 | 0 | 2026-04-20 | 446 |  | 2026-03-25T17:35:29.565Z |

| id | category_id | title | priority | due_date | position | start_date | duration_days | tag | created_at |
| --- | --- | --- | --- | --- | --- | --- | --- | --- | --- |
| 505 | 262 | Déclaration achevement travaux et remise d'ouvrage | normal | 2026-04-29 | 1 | 2026-04-29 | 1 |  | 2026-03-25T17:35:29.780Z |
| 506 | 262 | Saisie OIP et remise des plans "CAE minutes" | normal | 2026-04-29 | 2 | 2026-04-29 | 1 |  | 2026-03-25T17:35:29.988Z |
| 507 | 262 | Remise plans CAE | normal | 2026-07-09 | 3 | 2026-04-29 | 52 |  | 2026-03-25T17:35:30.193Z |
| 508 | 262 | Chargement BD (évolution tranche BR) | normal | 2026-04-29 | 4 | 2026-04-20 | 8 |  | 2026-03-25T17:35:30.396Z |
| 509 | 262 | Charge Filerie | normal | 2026-04-29 | 5 | 2026-04-20 | 8 |  | 2026-03-25T17:35:30.614Z |
| 510 | 262 | Réception d'ouvrage et controle de conformité | normal | 2026-04-29 | 6 | 2026-04-20 | 8 |  | 2026-03-25T17:35:30.820Z |
| 511 | 262 | Déconsignation départ LA PERCHE 2025 | normal | 2026-04-30 | 7 | 2026-04-30 | 1 |  | 2026-03-25T17:35:31.031Z |
| 512 | 262 | Mise en conduite MEC | normal | 2026-04-30 | 8 | 2026-04-30 | 1 |  | 2026-03-25T17:35:31.239Z |
| 513 | 262 | Travaux HT "2027" | normal | 2027-12-31 | 9 | 2027-12-31 | 1 |  | 2026-03-25T17:35:31.446Z |
| 514 | 262 | Travaux HT "2027" - Dépose liaison HT Ph3 | normal | 2027-12-31 | 10 | 2027-12-31 | 1 |  | 2026-03-25T17:35:31.661Z |
| 515 | 262 | Travaux HT "2027" - Dépose CB (et CHF) et Charpente | normal | 2027-12-31 | 11 | 2027-12-31 | 1 |  | 2026-03-25T17:35:31.865Z |
| 516 | 262 | Travaux HT "2027" - Reprise tendues Ph3 | normal | 2027-12-31 | 12 | 2027-12-31 | 1 |  | 2026-03-25T17:35:32.068Z |
| 517 | 262 | Travaux HT "2027" - Dépose anciens câbles BT | normal | 2027-12-31 | 13 | 2027-12-31 | 1 |  | 2026-03-25T17:35:32.272Z |
| 518 | 262 | Travaux GC "2027" | normal | 2028-01-03 | 14 | 2027-12-31 | 2 |  | 2026-03-25T17:35:32.479Z |
| 519 | 262 | Travaux GC "2027" - Arasement massif CB | normal | 2028-01-03 | 15 | 2027-12-31 | 2 |  | 2026-03-25T17:35:32.691Z |
| 520 | 263 | PAQE Travaux | normal |  | 0 |  | 1 | DTT, Travaux | 2026-03-25T17:37:24.165Z |
| 521 | 264 | Dossiers BPE | normal |  | 0 |  | 1 | DTT, Travaux | 2026-03-25T17:37:24.583Z |
| 522 | 265 | Mise à jour des Bases de Données | normal |  | 0 |  | 1 | DTT, Travaux | 2026-03-25T17:37:24.988Z |
| 523 | 266 | DUEM (Dossier d'Utilisation d'Exploitation et de Maintenance) | normal |  | 0 |  | 1 | DTT, Travaux | 2026-03-25T17:37:25.407Z |
| 524 | 267 | DIUO ( Dossier d'Intervention Ultérieure sur l'Ouvrage) | normal |  | 0 |  | 1 | DTT, Travaux | 2026-03-25T17:37:25.824Z |
| 525 | 268 | Annexes | normal |  | 0 |  | 1 | DTT, Travaux | 2026-03-25T17:37:26.233Z |
| 526 | 269 | MES intégrale Projet | normal |  | 0 |  | 0 |  | 2026-03-25T17:37:57.383Z |
| 527 | 270 | PAQE Travaux | normal |  | 0 |  | 1 | DTT, Travaux | 2026-03-25T17:43:00.733Z |
| 528 | 271 | Dossiers BPE | normal |  | 0 |  | 1 | DTT, Travaux | 2026-03-25T17:43:01.140Z |
| 529 | 272 | Mise à jour des Bases de Données | normal |  | 0 |  | 1 | DTT, Travaux | 2026-03-25T17:43:01.561Z |
| 530 | 273 | DUEM (Dossier d'Utilisation d'Exploitation et de Maintenance) | normal |  | 0 |  | 1 | DTT, Travaux | 2026-03-25T17:43:01.978Z |
| 531 | 274 | DIUO ( Dossier d'Intervention Ultérieure sur l'Ouvrage) | normal |  | 0 |  | 1 | DTT, Travaux | 2026-03-25T17:43:02.411Z |
| 532 | 275 | Annexes | normal |  | 0 |  | 1 | DTT, Travaux | 2026-03-25T17:43:02.842Z |
| 533 | 276 | Poste 225kV de LA GAUDIERE | normal | 2026-12-17 | 0 | 2009-09-21 | 4500 | CTF, CTRP, PTF, Etudes préliminaires - DCT | 2026-03-25T17:44:04.331Z |
| 534 | 277 | CONSTRUCTION CELLULE DEBENAS 225kV | normal | 2026-12-17 | 0 | 2009-09-21 | 4500 |  | 2026-03-25T17:44:04.749Z |
| 535 | 277 | REUNIONS TRAVAUX | normal | 2026-04-21 | 1 | 2026-01-22 | 64 |  | 2026-03-25T17:44:04.963Z |
| 536 | 277 | REUNIONS TRAVAUX - Réunion mensuelle N°1 | normal | 2026-01-22 | 2 | 2026-01-22 | 1 |  | 2026-03-25T17:44:05.179Z |
| 537 | 277 | REUNIONS TRAVAUX - Réunion mensuelle N°2 | normal | 2026-02-17 | 3 | 2026-02-17 | 1 |  | 2026-03-25T17:44:05.383Z |
| 538 | 277 | REUNIONS TRAVAUX - Réunion mensuelle N°3 | normal | 2026-03-17 | 4 | 2026-03-17 | 1 |  | 2026-03-25T17:44:05.597Z |
| 539 | 277 | REUNIONS TRAVAUX - Réunion mensuelle N°4 | normal | 2026-04-21 | 5 | 2026-04-21 | 1 |  | 2026-03-25T17:44:05.800Z |
| 540 | 277 | INSTALLATION DE CHANTIER | normal | 2026-01-16 | 6 | 2025-11-04 | 54 |  | 2026-03-25T17:44:06.003Z |
| 541 | 277 | INSTALLATION DE CHANTIER - Plan de prévention | normal | 2025-11-04 | 7 | 2025-11-04 | 1 |  | 2026-03-25T17:44:06.213Z |
| 542 | 277 | INSTALLATION DE CHANTIER - Installation de la base Vie | normal | 2026-01-16 | 8 | 2026-01-05 | 10 |  | 2026-03-25T17:44:06.423Z |
| 543 | 277 | LIVRAISON | normal | 2026-11-10 | 9 | 2026-01-05 | 222 |  | 2026-03-25T17:44:06.628Z |
| 544 | 277 | LIVRAISON - Livraison OL 380165645 - FO | normal | 2026-01-12 | 10 | 2026-01-12 | 1 |  | 2026-03-25T17:44:06.846Z |
| 545 | 277 | LIVRAISON - Livraison OL 380165644 - CABLE BT | normal | 2026-01-12 | 11 | 2026-01-12 | 1 |  | 2026-03-25T17:44:07.049Z |
| 546 | 277 | LIVRAISON - Livraison OL 380166427 - DJ + TC + TCT + TORE | normal | 2026-02-17 | 12 | 2026-02-17 | 1 |  | 2026-03-25T17:44:07.253Z |
| 547 | 277 | LIVRAISON - Livraison OL 480099536 - Sectionneurs | normal | 2026-02-17 | 13 | 2026-02-17 | 1 |  | 2026-03-25T17:44:07.455Z |
| 548 | 277 | LIVRAISON - Charpentes | normal | 2026-01-19 | 14 | 2026-01-19 | 1 |  | 2026-03-25T17:44:07.661Z |
| 549 | 277 | LIVRAISON - Câble HT | normal | 2026-03-05 | 15 | 2026-03-05 | 1 |  | 2026-03-25T17:44:07.865Z |
| 550 | 277 | LIVRAISON - Armoire BT | normal | 2026-03-09 | 16 | 2026-03-09 | 1 |  | 2026-03-25T17:44:08.069Z |
| 551 | 277 | LIVRAISON - Livraison OL 480099243 - IDEA OPTICAL | normal | 2026-01-12 | 17 | 2026-01-12 | 1 |  | 2026-03-25T17:44:08.274Z |
| 552 | 277 | LIVRAISON - Livraison OL 480099066 - IDEA OPTICAL | normal | 2026-01-05 | 18 | 2026-01-05 | 1 |  | 2026-03-25T17:44:08.478Z |
| 553 | 277 | LIVRAISON - Livraison OL 380166116 - Matériel TCM | normal | 2026-01-12 | 19 | 2026-01-12 | 1 |  | 2026-03-25T17:44:08.691Z |
| 554 | 277 | LIVRAISON - Livraison OL 380165786 - CABLE BT | normal | 2026-01-20 | 20 | 2026-01-20 | 1 |  | 2026-03-25T17:44:08.895Z |
| 555 | 277 | LIVRAISON - Livraison Colonne SB | normal | 2026-02-10 | 21 | 2026-02-10 | 1 |  | 2026-03-25T17:44:09.110Z |
| 556 | 277 | LIVRAISON - Livraison Armoire comptage | normal | 2026-11-10 | 22 | 2026-11-10 | 1 |  | 2026-03-25T17:44:09.313Z |
| 557 | 277 | TRAVAUX LS DEBENAS POSTE DE LA GAUDIERE | normal | 2026-11-12 | 23 | 2026-09-07 | 49 | CTF, CTRP, PTF, Etudes préliminaires - DCT | 2026-03-25T17:44:09.528Z |
| 558 | 277 | TRAVAUX LS DEBENAS POSTE DE LA GAUDIERE - GC en PEHD 180 | normal | 2026-09-11 | 24 | 2026-09-07 | 5 | CTF, CTRP, PTF, Etudes préliminaires - DCT | 2026-03-25T17:44:09.744Z |
| 559 | 277 | TRAVAUX LS DEBENAS POSTE DE LA GAUDIERE - Ouverture ouvrage remontée GAUDIERE | normal | 2026-09-18 | 25 | 2026-09-14 | 5 | CTF, CTRP, PTF, Etudes préliminaires - DCT | 2026-03-25T17:44:09.961Z |
| 560 | 277 | TRAVAUX LS DEBENAS POSTE DE LA GAUDIERE - Ouverture ouvrage remontée DEBENAS | normal | 2026-09-25 | 26 | 2026-09-21 | 5 | CTF, CTRP, PTF, Etudes préliminaires - DCT | 2026-03-25T17:44:10.178Z |
| 561 | 277 | TRAVAUX LS DEBENAS POSTE DE LA GAUDIERE - Aiguillage des fourreaux | normal | 2026-09-28 | 27 | 2026-09-28 | 1 | CTF, CTRP, PTF, Etudes préliminaires - DCT | 2026-03-25T17:44:10.394Z |
| 562 | 277 | TRAVAUX LS DEBENAS POSTE DE LA GAUDIERE - Déroulage des câbles de puissance | normal | 2026-09-30 | 28 | 2026-09-29 | 2 | CTF, CTRP, PTF, Etudes préliminaires - DCT | 2026-03-25T17:44:10.609Z |
| 563 | 277 | TRAVAUX LS DEBENAS POSTE DE LA GAUDIERE - Essais de gaine après déroulage | normal | 2026-10-01 | 29 | 2026-10-01 | 1 | CTF, CTRP, PTF, Etudes préliminaires - DCT | 2026-03-25T17:44:10.829Z |
| 564 | 277 | TRAVAUX LS DEBENAS POSTE DE LA GAUDIERE - Déroulage câble de terre | normal | 2026-10-06 | 30 | 2026-10-02 | 3 | CTF, CTRP, PTF, Etudes préliminaires - DCT | 2026-03-25T17:44:11.046Z |
| 565 | 277 | TRAVAUX LS DEBENAS POSTE DE LA GAUDIERE - Déroulage des 2 câbles FO | normal | 2026-10-08 | 31 | 2026-10-07 | 2 | CTF, CTRP, PTF, Etudes préliminaires - DCT | 2026-03-25T17:44:11.260Z |
| 566 | 277 | TRAVAUX LS DEBENAS POSTE DE LA GAUDIERE - Confection extrémitées GAUDIERE | normal | 2026-10-22 | 32 | 2026-10-09 | 10 | CTF, CTRP, PTF, Etudes préliminaires - DCT | 2026-03-25T17:44:11.478Z |
| 567 | 277 | TRAVAUX LS DEBENAS POSTE DE LA GAUDIERE - Confection extrémitées DEBENAS | normal | 2026-11-05 | 33 | 2026-10-23 | 10 | CTF, CTRP, PTF, Etudes préliminaires - DCT | 2026-03-25T17:44:11.685Z |
| 568 | 277 | TRAVAUX LS DEBENAS POSTE DE LA GAUDIERE - Remblai ouvrage de remontée GAUDIERE | normal | 2026-11-09 | 34 | 2026-11-06 | 2 | CTF, CTRP, PTF, Etudes préliminaires - DCT | 2026-03-25T17:44:11.895Z |
| 569 | 277 | TRAVAUX LS DEBENAS POSTE DE LA GAUDIERE - Remblai ouvrage de remontée DEBENAS | normal | 2026-11-11 | 35 | 2026-11-10 | 2 | CTF, CTRP, PTF, Etudes préliminaires - DCT | 2026-03-25T17:44:12.102Z |
| 570 | 277 | TRAVAUX LS DEBENAS POSTE DE LA GAUDIERE - Essais final câblier | normal | 2026-11-12 | 36 | 2026-11-12 | 1 | CTF, CTRP, PTF, Etudes préliminaires - DCT | 2026-03-25T17:44:12.311Z |
| 571 | 277 | TRAVAUX LS DEBENAS POSTE DE LA GAUDIERE - Annexe B LS DEBENAS - LA GAUDIERE | normal | 2026-11-12 | 37 | 2026-11-12 | 1 | CTF, CTRP, PTF, Etudes préliminaires - DCT | 2026-03-25T17:44:12.519Z |
| 572 | 277 | TRAVAUX LS DEBENAS POSTE DE LA GAUDIERE - Annexe C LS DEBENAS - LA GAUDIERE | normal | 2026-11-12 | 38 | 2026-11-12 | 1 | CTF, CTRP, PTF, Etudes préliminaires - DCT | 2026-03-25T17:44:12.727Z |
| 573 | 277 | TRAVAUX DEPART DEBENAS POSTE DE LA GAUDIERE | normal | 2026-12-03 | 39 | 2026-01-05 | 239 | CTF, CTRP, PTF, Etudes préliminaires - DCT | 2026-03-25T17:44:12.940Z |
| 574 | 277 | TRAVAUX DEPART DEBENAS POSTE DE LA GAUDIERE - Point de Convocation : Démarrage travaux de fondations | normal | 2026-01-05 | 40 | 2026-01-05 | 1 | CTF, CTRP, PTF, Etudes préliminaires - DCT | 2026-03-25T17:44:13.159Z |

| id | category_id | title | priority | due_date | position | start_date | duration_days | tag | created_at |
| --- | --- | --- | --- | --- | --- | --- | --- | --- | --- |
| 575 | 277 | TRAVAUX DEPART DEBENAS POSTE DE LA GAUDIERE - Réalisation des massifs | normal | 2026-01-23 | 41 | 2026-01-05 | 15 | CTF, CTRP, PTF, Etudes préliminaires - DCT | 2026-03-25T17:44:13.377Z |
| 576 | 277 | TRAVAUX DEPART DEBENAS POSTE DE LA GAUDIERE - Point de Convocation : Premier massif coulés Charpente principale | normal | 2026-01-05 | 42 | 2026-01-05 | 1 | CTF, CTRP, PTF, Etudes préliminaires - DCT | 2026-03-25T17:44:13.594Z |
| 577 | 277 | TRAVAUX DEPART DEBENAS POSTE DE LA GAUDIERE - Circuit de terre | normal | 2026-02-13 | 43 | 2026-01-19 | 20 | CTF, CTRP, PTF, Etudes préliminaires - DCT | 2026-03-25T17:44:13.810Z |
| 578 | 277 | TRAVAUX DEPART DEBENAS POSTE DE LA GAUDIERE - Point de Convocation : Circuit de terre | normal | 2026-01-05 | 44 | 2026-01-05 | 1 | CTF, CTRP, PTF, Etudes préliminaires - DCT | 2026-03-25T17:44:14.027Z |
| 579 | 277 | TRAVAUX DEPART DEBENAS POSTE DE LA GAUDIERE - Réalisation des caniveaux et tranchées BT | normal | 2026-01-30 | 45 | 2026-01-19 | 10 | CTF, CTRP, PTF, Etudes préliminaires - DCT | 2026-03-25T17:44:14.243Z |
| 580 | 277 | TRAVAUX DEPART DEBENAS POSTE DE LA GAUDIERE - Tirage des liaisons FO | normal | 2026-02-06 | 46 | 2026-02-02 | 5 | CTF, CTRP, PTF, Etudes préliminaires - DCT | 2026-03-25T17:44:14.449Z |
| 581 | 277 | TRAVAUX DEPART DEBENAS POSTE DE LA GAUDIERE - Tirage liaison BT | normal | 2026-02-06 | 47 | 2026-01-26 | 10 | CTF, CTRP, PTF, Etudes préliminaires - DCT | 2026-03-25T17:44:14.659Z |
| 582 | 277 | TRAVAUX DEPART DEBENAS POSTE DE LA GAUDIERE - Test Tourets FO | normal | 2026-02-20 | 48 | 2026-02-16 | 5 | CTF, CTRP, PTF, Etudes préliminaires - DCT | 2026-03-25T17:44:14.868Z |
| 583 | 277 | TRAVAUX DEPART DEBENAS POSTE DE LA GAUDIERE - Raccordement FO | normal | 2026-11-13 | 49 | 2026-11-09 | 5 | CTF, CTRP, PTF, Etudes préliminaires - DCT | 2026-03-25T17:44:15.075Z |
| 584 | 277 | TRAVAUX DEPART DEBENAS POSTE DE LA GAUDIERE - PV de Réception FO | normal | 2026-11-13 | 50 | 2026-11-13 | 1 | CTF, CTRP, PTF, Etudes préliminaires - DCT | 2026-03-25T17:44:15.288Z |
| 585 | 277 | TRAVAUX DEPART DEBENAS POSTE DE LA GAUDIERE - Déclaration d'achèvement de travaux Réseaux FO | normal | 2026-11-13 | 51 | 2026-11-13 | 1 | CTF, CTRP, PTF, Etudes préliminaires - DCT | 2026-03-25T17:44:15.491Z |
| 586 | 277 | TRAVAUX DEPART DEBENAS POSTE DE LA GAUDIERE - Réception FO | normal | 2026-11-26 | 52 | 2026-11-25 | 2 | CTF, CTRP, PTF, Etudes préliminaires - DCT | 2026-03-25T17:44:15.694Z |
| 587 | 277 | TRAVAUX DEPART DEBENAS POSTE DE LA GAUDIERE - Montage des charpentes | normal | 2026-02-27 | 53 | 2026-02-02 | 20 | CTF, CTRP, PTF, Etudes préliminaires - DCT | 2026-03-25T17:44:15.909Z |
| 588 | 277 | TRAVAUX DEPART DEBENAS POSTE DE LA GAUDIERE - Reprise suite intempéries | normal | 2026-03-06 | 54 | 2026-03-02 | 5 | CTF, CTRP, PTF, Etudes préliminaires - DCT | 2026-03-25T17:44:16.125Z |
| 589 | 277 | TRAVAUX DEPART DEBENAS POSTE DE LA GAUDIERE - Consignation UA ALT | normal | 2026-03-05 | 55 | 2026-03-05 | 1 | CTF, CTRP, PTF, Etudes préliminaires - DCT | 2026-03-25T17:44:16.340Z |
| 590 | 277 | TRAVAUX DEPART DEBENAS POSTE DE LA GAUDIERE - Ajout de la nouvelle colonne SB | normal | 2026-03-05 | 56 | 2026-03-05 | 0.5 | CTF, CTRP, PTF, Etudes préliminaires - DCT | 2026-03-25T17:44:16.545Z |
| 591 | 277 | TRAVAUX DEPART DEBENAS POSTE DE LA GAUDIERE - Déconsignation UA ALT | normal | 2026-03-05 | 57 | 2026-03-05 | 1 | CTF, CTRP, PTF, Etudes préliminaires - DCT | 2026-03-25T17:44:16.757Z |
| 592 | 277 | TRAVAUX DEPART DEBENAS POSTE DE LA GAUDIERE - Pose TC + TT + ST + SL + DJ | normal | 2026-03-18 | 58 | 2026-02-27 | 14 | CTF, CTRP, PTF, Etudes préliminaires - DCT | 2026-03-25T17:44:16.963Z |
| 593 | 277 | TRAVAUX DEPART DEBENAS POSTE DE LA GAUDIERE - Point de Convocation : Premier Sertissage | normal | 2026-03-19 | 59 | 2026-03-19 | 1 | CTF, CTRP, PTF, Etudes préliminaires - DCT | 2026-03-25T17:44:17.174Z |
| 594 | 277 | TRAVAUX DEPART DEBENAS POSTE DE LA GAUDIERE - Raccordement HT | normal | 2026-03-25 | 60 | 2026-03-19 | 5 | CTF, CTRP, PTF, Etudes préliminaires - DCT | 2026-03-25T17:44:17.383Z |
| 595 | 277 | TRAVAUX DEPART DEBENAS POSTE DE LA GAUDIERE - Réglage ST + SL | normal | 2026-03-30 | 61 | 2026-03-26 | 3 | CTF, CTRP, PTF, Etudes préliminaires - DCT | 2026-03-25T17:44:17.587Z |
| 596 | 277 | TRAVAUX DEPART DEBENAS POSTE DE LA GAUDIERE - Pose charpentes SA1 et SA2 | normal | 2026-03-26 | 62 | 2026-03-26 | 1 | CTF, CTRP, PTF, Etudes préliminaires - DCT | 2026-03-25T17:44:17.790Z |
| 597 | 277 | TRAVAUX DEPART DEBENAS POSTE DE LA GAUDIERE - Installation Armoire BT | normal | 2026-03-24 | 63 | 2026-03-23 | 2 | CTF, CTRP, PTF, Etudes préliminaires - DCT | 2026-03-25T17:44:17.996Z |
| 598 | 277 | TRAVAUX DEPART DEBENAS POSTE DE LA GAUDIERE - Raccordement BT | normal | 2026-04-08 | 64 | 2026-03-25 | 11 | CTF, CTRP, PTF, Etudes préliminaires - DCT | 2026-03-25T17:44:18.201Z |
| 599 | 277 | TRAVAUX DEPART DEBENAS POSTE DE LA GAUDIERE - Annexe B - Déclaration d'achément des travaux Départ DEBENAS HORS SAB HT+BT | normal | 2026-04-08 | 65 | 2026-04-08 | 1 | CTF, CTRP, PTF, Etudes préliminaires - DCT | 2026-03-25T17:44:18.406Z |
| 600 | 277 | TRAVAUX DEPART DEBENAS POSTE DE LA GAUDIERE - Annexe C - Désignation chargé d'exploitation Départ DEBENAS HORS SAB HT+BT | normal | 2026-04-08 | 66 | 2026-04-08 | 1 | CTF, CTRP, PTF, Etudes préliminaires - DCT | 2026-03-25T17:44:18.622Z |
| 601 | 277 | TRAVAUX DEPART DEBENAS POSTE DE LA GAUDIERE - Consignation BT Départ DEBENAS Hors SAB HT+BT | normal | 2026-04-09 | 67 | 2026-04-09 | 1 | CTF, CTRP, PTF, Etudes préliminaires - DCT | 2026-03-25T17:44:18.840Z |
| 602 | 277 | TRAVAUX DEPART DEBENAS POSTE DE LA GAUDIERE - Réalisation de la piste côté DJ | normal | 2026-05-08 | 68 | 2026-04-27 | 10 | CTF, CTRP, PTF, Etudes préliminaires - DCT | 2026-03-25T17:44:19.056Z |
| 603 | 277 | TRAVAUX DEPART DEBENAS POSTE DE LA GAUDIERE - Réalisation des pistes | normal | 2026-11-19 | 69 | 2026-11-13 | 5 | CTF, CTRP, PTF, Etudes préliminaires - DCT | 2026-03-25T17:44:19.260Z |
| 604 | 277 | TRAVAUX DEPART DEBENAS POSTE DE LA GAUDIERE - Mise en service DJ | normal | 2026-04-14 | 70 | 2026-04-14 | 1 | CTF, CTRP, PTF, Etudes préliminaires - DCT | 2026-03-25T17:44:19.464Z |
| 605 | 277 | TRAVAUX DEPART DEBENAS POSTE DE LA GAUDIERE - Déconsignation BT pour CVS | normal | 2026-04-20 | 71 | 2026-04-20 | 1 | CTF, CTRP, PTF, Etudes préliminaires - DCT | 2026-03-25T17:44:19.672Z |
| 606 | 277 | TRAVAUX DEPART DEBENAS POSTE DE LA GAUDIERE - CVS | normal | 2026-04-24 | 72 | 2026-04-20 | 5 | CTF, CTRP, PTF, Etudes préliminaires - DCT | 2026-03-25T17:44:19.885Z |
| 607 | 277 | TRAVAUX DEPART DEBENAS POSTE DE LA GAUDIERE - Chargement nouvelle BD | normal | 2026-04-21 | 73 | 2026-04-21 | 1 | CTF, CTRP, PTF, Etudes préliminaires - DCT | 2026-03-25T17:44:20.089Z |
| 608 | 277 | TRAVAUX DEPART DEBENAS POSTE DE LA GAUDIERE - CVS Fin | normal | 2026-12-03 | 74 | 2026-11-30 | 4 | CTF, CTRP, PTF, Etudes préliminaires - DCT | 2026-03-25T17:44:20.306Z |
| 609 | 277 | TRAVAUX DEPART DEBENAS POSTE DE LA GAUDIERE - Essais E3C-stw | normal | 2026-12-02 | 75 | 2026-12-02 | 1 | CTF, CTRP, PTF, Etudes préliminaires - DCT | 2026-03-25T17:44:20.524Z |
| 610 | 277 | TRAVAUX DEPART DEBENAS POSTE DE LA GAUDIERE - Réception comptage | normal | 2026-12-02 | 76 | 2026-12-01 | 2 | CTF, CTRP, PTF, Etudes préliminaires - DCT | 2026-03-25T17:44:20.740Z |
| 611 | 277 | TRAVAUX DEPART DEBENAS POSTE DE LA GAUDIERE - Reprise de régalge suite à indisponibilité DIFF - Départs à confirmer | normal | 2026-11-30 | 77 | 2026-11-30 | 1 | CTF, CTRP, PTF, Etudes préliminaires - DCT | 2026-03-25T17:44:20.946Z |
| 612 | 277 | TRAVAUX DEPART DEBENAS POSTE DE LA GAUDIERE - Réception DIFF | normal | 2026-12-02 | 78 | 2026-12-01 | 2 | CTF, CTRP, PTF, Etudes préliminaires - DCT | 2026-03-25T17:44:21.157Z |
| 613 | 277 | TRAVAUX DEPART DEBENAS POSTE DE LA GAUDIERE - Reprise de régalge suite à indisponibilité DIFF - Départs à confirmer | normal | 2026-12-03 | 79 | 2026-12-03 | 1 | CTF, CTRP, PTF, Etudes préliminaires - DCT | 2026-03-25T17:44:21.365Z |
| 614 | 277 | TRAVAUX DEPART DEBENAS POSTE DE LA GAUDIERE - Consignation BO1 225kV | normal | 2026-06-22 | 80 | 2026-06-01 | 15.5 | CTF, CTRP, PTF, Etudes préliminaires - DCT | 2026-03-25T17:44:21.572Z |
| 615 | 277 | TRAVAUX DEPART DEBENAS POSTE DE LA GAUDIERE - Consignation BO1 225kV | normal | 2026-06-01 | 81 | 2026-06-01 | 0.5 | CTF, CTRP, PTF, Etudes préliminaires - DCT | 2026-03-25T17:44:21.781Z |
| 616 | 277 | TRAVAUX DEPART DEBENAS POSTE DE LA GAUDIERE - Montage SA1 | normal | 2026-06-04 | 82 | 2026-06-01 | 3 | CTF, CTRP, PTF, Etudes préliminaires - DCT | 2026-03-25T17:44:21.989Z |
| 617 | 277 | TRAVAUX DEPART DEBENAS POSTE DE LA GAUDIERE - Annexe B - Déclaration d'achément des travaux Départ DEBENAS | normal | 2026-06-04 | 83 | 2026-06-04 | 1 | CTF, CTRP, PTF, Etudes préliminaires - DCT | 2026-03-25T17:44:22.197Z |
| 618 | 277 | TRAVAUX DEPART DEBENAS POSTE DE LA GAUDIERE - Annexe C - Désignation chargé d'exploitation départ DEBENAS | normal | 2026-06-04 | 84 | 2026-06-04 | 1 | CTF, CTRP, PTF, Etudes préliminaires - DCT | 2026-03-25T17:44:22.406Z |
| 619 | 277 | TRAVAUX DEPART DEBENAS POSTE DE LA GAUDIERE - Raccordement HT SA -> DJ | normal | 2026-06-22 | 85 | 2026-06-19 | 1 | CTF, CTRP, PTF, Etudes préliminaires - DCT | 2026-03-25T17:44:22.615Z |
| 620 | 277 | TRAVAUX DEPART DEBENAS POSTE DE LA GAUDIERE - Réglages SECTIONNEUR | normal | 2026-06-10 | 86 | 2026-06-08 | 2.5 | CTF, CTRP, PTF, Etudes préliminaires - DCT | 2026-03-25T17:44:22.822Z |
| 621 | 277 | TRAVAUX DEPART DEBENAS POSTE DE LA GAUDIERE - Réception | normal | 2026-06-10 | 87 | 2026-06-10 | 1 | CTF, CTRP, PTF, Etudes préliminaires - DCT | 2026-03-25T17:44:23.032Z |
| 622 | 277 | TRAVAUX DEPART DEBENAS POSTE DE LA GAUDIERE - Déconsignation BO1 225kV | normal | 2026-06-12 | 88 | 2026-06-12 | 0.5 | CTF, CTRP, PTF, Etudes préliminaires - DCT | 2026-03-25T17:44:23.238Z |
| 623 | 277 | TRAVAUX DEPART DEBENAS POSTE DE LA GAUDIERE - Consignation BO2 225kV | normal | 2026-06-26 | 89 | 2026-06-15 | 9.5 | CTF, CTRP, PTF, Etudes préliminaires - DCT | 2026-03-25T17:44:23.448Z |
| 624 | 277 | TRAVAUX DEPART DEBENAS POSTE DE LA GAUDIERE - Consignation BO2 225kV + SA1 départ DEBENAS | normal | 2026-06-15 | 90 | 2026-06-15 | 0.5 | CTF, CTRP, PTF, Etudes préliminaires - DCT | 2026-03-25T17:44:23.655Z |
| 625 | 277 | TRAVAUX DEPART DEBENAS POSTE DE LA GAUDIERE - Montage SA2 | normal | 2026-06-19 | 91 | 2026-06-15 | 4 | CTF, CTRP, PTF, Etudes préliminaires - DCT | 2026-03-25T17:44:23.865Z |
| 626 | 277 | TRAVAUX DEPART DEBENAS POSTE DE LA GAUDIERE - Annexe B - Déclaration d'achément des travaux Départ DEBENAS | normal | 2026-06-19 | 92 | 2026-06-19 | 1 | CTF, CTRP, PTF, Etudes préliminaires - DCT | 2026-03-25T17:44:24.071Z |
| 627 | 277 | TRAVAUX DEPART DEBENAS POSTE DE LA GAUDIERE - Annexe C - Désignation chargé d'exploitation Départ DEBENAS | normal | 2026-06-19 | 93 | 2026-06-19 | 1 | CTF, CTRP, PTF, Etudes préliminaires - DCT | 2026-03-25T17:44:24.286Z |
| 628 | 277 | TRAVAUX DEPART DEBENAS POSTE DE LA GAUDIERE - Raccordement HT SA -> DJ | normal | 2026-06-22 | 94 | 2026-06-19 | 1 | CTF, CTRP, PTF, Etudes préliminaires - DCT | 2026-03-25T17:44:24.504Z |
| 629 | 277 | TRAVAUX DEPART DEBENAS POSTE DE LA GAUDIERE - Réglages SECTIONNEUR | normal | 2026-06-24 | 95 | 2026-06-22 | 2.5 | CTF, CTRP, PTF, Etudes préliminaires - DCT | 2026-03-25T17:44:24.721Z |
| 630 | 277 | TRAVAUX DEPART DEBENAS POSTE DE LA GAUDIERE - Réception | normal | 2026-06-24 | 96 | 2026-06-24 | 1 | CTF, CTRP, PTF, Etudes préliminaires - DCT | 2026-03-25T17:44:24.936Z |
| 631 | 277 | TRAVAUX DEPART DEBENAS POSTE DE LA GAUDIERE - Déconsignation BO2 225kV + SA1 départ DEBENAS | normal | 2026-06-26 | 97 | 2026-06-26 | 0.5 | CTF, CTRP, PTF, Etudes préliminaires - DCT | 2026-03-25T17:44:25.154Z |
| 632 | 277 | ENCADRANT POSTE DE DEBENAS | normal | 2026-12-17 | 98 | 2009-09-21 | 4500 | CTF, CTRP, PTF, Etudes préliminaires - DCT | 2026-03-25T17:44:25.369Z |
| 633 | 277 | ENCADRANT POSTE DE DEBENAS - Réalisation Massif BAC -- A VALIDER AVEC TRAVAUX SPIE | normal | 2026-07-29 | 99 | 2026-07-27 | 3 | CTF, CTRP, PTF, Etudes préliminaires - DCT | 2026-03-25T17:44:25.577Z |
| 634 | 277 | ENCADRANT POSTE DE DEBENAS - Pose des charpentes + MALT -- A VALIDER AVEC TRAVAUX SPIE | normal | 2026-07-31 | 100 | 2026-07-30 | 2 | CTF, CTRP, PTF, Etudes préliminaires - DCT | 2026-03-25T17:44:25.787Z |
| 635 | 277 | ENCADRANT POSTE DE DEBENAS - Circuit de terre | normal | 2009-09-21 | 101 | 2009-09-21 | 1 | CTF, CTRP, PTF, Etudes préliminaires - DCT | 2026-03-25T17:44:25.995Z |
| 636 | 277 | ENCADRANT POSTE DE DEBENAS - Pose armoire comptage et structure d'acceuil | normal | 2026-11-20 | 102 | 2026-11-16 | 5 | CTF, CTRP, PTF, Etudes préliminaires - DCT | 2026-03-25T17:44:26.200Z |
| 637 | 277 | ENCADRANT POSTE DE DEBENAS - Déroulage et raccordement liaisons BT et FO | normal | 2026-11-25 | 103 | 2026-11-23 | 3 | CTF, CTRP, PTF, Etudes préliminaires - DCT | 2026-03-25T17:44:26.416Z |
| 638 | 277 | ENCADRANT POSTE DE DEBENAS - Raccordements liaisons FO coffrets WCT2 - Cahier de recette | normal | 2026-12-02 | 104 | 2026-11-26 | 5 | CTF, CTRP, PTF, Etudes préliminaires - DCT | 2026-03-25T17:44:26.632Z |
| 639 | 277 | ENCADRANT POSTE DE DEBENAS - Raccordements câbles BT tores | normal | 2026-11-27 | 105 | 2026-11-26 | 2 | CTF, CTRP, PTF, Etudes préliminaires - DCT | 2026-03-25T17:44:26.849Z |
| 640 | 277 | ENCADRANT POSTE DE DEBENAS - Annexe B - Déclaration d'achément des travaux | normal | 2026-11-27 | 106 | 2026-11-27 | 1 | CTF, CTRP, PTF, Etudes préliminaires - DCT | 2026-03-25T17:44:27.064Z |
| 641 | 277 | ENCADRANT POSTE DE DEBENAS - Réception armoire client + essais Diff C | normal | 2026-12-04 | 107 | 2026-11-30 | 5 | CTF, CTRP, PTF, Etudes préliminaires - DCT | 2026-03-25T17:44:27.279Z |
| 642 | 277 | ENCADRANT POSTE DE DEBENAS - Réception Armoire comptage hors LEX | normal | 2026-12-04 | 108 | 2026-11-30 | 5 | CTF, CTRP, PTF, Etudes préliminaires - DCT | 2026-03-25T17:44:27.484Z |
| 643 | 277 | ENCADRANT POSTE DE DEBENAS - Essai en commun ENGIE | normal | 2026-12-17 | 109 | 2026-12-14 | 4 | CTF, CTRP, PTF, Etudes préliminaires - DCT | 2026-03-25T17:44:27.699Z |
| 644 | 277 | ENCADRANT POSTE DE DEBENAS - Injection LEX comptage | normal | 2026-12-17 | 110 | 2026-12-14 | 4 | CTF, CTRP, PTF, Etudes préliminaires - DCT | 2026-03-25T17:44:27.914Z |

| id | category_id | title | description | priority | due_date | assignee | position | start_date | duration_days | tag | created_at | progress | status | milestones | updated_at |
| --- | --- | --- | --- | --- | --- | --- | --- | --- | --- | --- | --- | --- | --- | --- | --- |
| 645 | 277 | Mise en conduite DEBENAS 225kV |  | normal | 2026-12-04 |  | 111 | 2026-12-04 | 1 |  | 2026-03-25T17:44:28.131Z |  |  |  |  |
| 646 | 278 | Rédaction CCTP | Conc v Racc en 04/27 | normal | 2026-04-25 | DURAND Eric | 0 | 2025-10-23 | 132 | CCTP, consultations | 2026-03-25T18:38:36.648Z | 0 | todo |  | 2026-03-27T08:43:42.987Z |
| 647 | 279 | Soumission Offre technique Entreprise |  | normal |  |  | 0 |  | 132 | CCTP, consultations | 2026-03-25T18:38:37.080Z |  |  |  |  |
| 648 | 280 | Négociation |  | normal |  |  | 0 |  | 132 | CCTP, consultations | 2026-03-25T18:38:37.515Z |  |  |  |  |
| 649 | 281 | Contractualisation Etude |  | normal |  |  | 0 |  | 132 | CCTP, consultations | 2026-03-25T18:38:37.945Z |  |  |  |  |
| 650 | 282 | Contractualisation Travaux |  | normal |  |  | 0 |  | 873.5 | DTT, Travaux | 2026-03-25T18:38:38.580Z |  |  |  |  |
| 651 | 283 | Go/No GO Travaux |  | normal |  |  | 0 |  | 873.5 | DTT, Travaux | 2026-03-25T18:38:39.013Z |  |  |  |  |
| 652 | 284 | Contractualisation Travaux |  | normal |  |  | 0 |  | 9 | DTT, Travaux | 2026-03-25T18:38:39.661Z |  |  |  |  |
| 653 | 285 | Go/No GO Travaux |  | normal |  |  | 0 |  | 1 | DTT, Travaux | 2026-03-25T18:38:40.096Z |  |  |  |  |
| 654 | 286 | Rédaction CCTP |  | normal |  | DURAND Eric | 0 |  | 132 | CCTP, consultations | 2026-03-26T10:27:06.157Z | 100 | done |  | 2026-03-26T10:27:32.345Z |
| 655 | 287 | Soumission Offre technique Entreprise | !\ En attente retour devis MASTERGRID | normal | 2026-03-27 | DURAND Eric | 0 |  | 132 | CCTP, consultations | 2026-03-26T10:27:06.589Z | 34 | waiting |  | 2026-03-26T10:28:26.096Z |
| 656 | 288 | Négociation |  | normal |  |  | 0 |  | 132 | CCTP, consultations | 2026-03-26T10:27:07.021Z |  |  |  |  |
| 657 | 289 | Contractualisation Etude |  | normal |  |  | 0 |  | 132 | CCTP, consultations | 2026-03-26T10:27:07.447Z |  |  |  |  |
| 658 | 290 | Rédaction CCTP |  | normal | 2025-03-14 | DURAND Eric | 0 |  | 17.5 | CCTP, consultations | 2026-03-26T12:05:45.119Z | 99 | done |  | 2026-03-30T07:46:14.668Z |
| 659 | 291 | Soumission Offre technique Entreprise |  | normal | 2025-03-14 | DURAND Eric | 0 |  | 35 | CCTP, consultations | 2026-03-26T12:05:45.551Z | 100 | done |  | 2026-03-30T07:47:19.925Z |
| 660 | 292 | Négociation |  | normal |  |  | 0 |  | 35 | CCTP, consultations | 2026-03-26T12:05:45.982Z |  |  |  |  |
| 661 | 293 | Contractualisation Etude |  | normal |  |  | 0 |  | 9 | CCTP, consultations | 2026-03-26T12:05:46.409Z |  |  |  |  |
| 662 | 294 | Contractualisation Travaux |  | normal |  |  | 0 |  | 9 | DTT, Travaux | 2026-03-26T12:05:47.061Z |  |  |  |  |
| 663 | 295 | Go/No GO Travaux |  | normal |  |  | 0 |  | 1 | DTT, Travaux | 2026-03-26T12:05:47.494Z |  |  |  |  |
| 664 | 296 | Contractualisation Travaux |  | normal |  |  | 0 |  | 873.5 | DTT, Travaux | 2026-03-26T12:09:41.469Z |  |  |  |  |
| 665 | 297 | Go/No GO Travaux |  | normal |  |  | 0 |  | 873.5 | DTT, Travaux | 2026-03-26T12:09:41.903Z |  |  |  |  |
| 666 | 298 | Validation Dossier EDD |  | normal |  |  | 0 |  | 1 | Etudes V1, V2, APD, DI, Conv Racc | 2026-03-26T12:12:09.955Z |  |  |  |  |
| 667 | 299 | Rédaction DI |  | normal |  |  | 0 |  | 9 | Etudes V1, V2, APD, DI, Conv Racc | 2026-03-26T12:12:10.390Z |  |  |  |  |
| 668 | 300 | Passage en RRR-DI |  | normal |  |  | 0 |  | 0 | Etudes V1, V2, APD, DI, Conv Racc | 2026-03-26T12:12:10.821Z |  |  |  |  |
| 669 | 301 | Passage en CRP |  | normal |  |  | 0 |  | 0 | Etudes V1, V2, APD, DI, Conv Racc | 2026-03-26T12:12:11.255Z |  |  |  |  |
| 670 | 302 | Passage en CNI-DI |  | normal |  |  | 0 |  | 0 | Etudes V1, V2, APD, DI, Conv Racc | 2026-03-26T12:12:11.688Z |  |  |  |  |
| 671 | 303 | Réunion de Lancement |  | normal |  |  | 0 |  | 4.5 | Etudes V1, V2, APD, DI, Conv Racc | 2026-03-26T12:12:12.120Z |  |  |  |  |
| 672 | 303 | Envoi des documents par RTE |  | normal |  |  | 1 |  | 4.5 | Etudes V1, V2, APD, DI, Conv Racc | 2026-03-26T12:12:12.337Z |  |  |  |  |
| 673 | 303 | Rédaction du Rapport d'Alerte par L'auditeur |  | normal |  |  | 2 |  | 9 | Etudes V1, V2, APD, DI, Conv Racc | 2026-03-26T12:12:12.553Z |  |  |  |  |
| 674 | 303 | Sessions d'Expertise |  | normal |  |  | 3 |  | 13 | Etudes V1, V2, APD, DI, Conv Racc | 2026-03-26T12:12:12.768Z |  |  |  |  |
| 675 | 303 | Rédaction du Rapport Préliminaires par L'auditeur |  | normal |  |  | 4 |  | 13 | Etudes V1, V2, APD, DI, Conv Racc | 2026-03-26T12:12:12.985Z |  |  |  |  |
| 676 | 303 | Envoi des remarques de RTE |  | normal |  |  | 5 |  | 9 | Etudes V1, V2, APD, DI, Conv Racc | 2026-03-26T12:12:13.201Z |  |  |  |  |
| 677 | 303 | Rédaction du Rapport Final par l'Auditeur |  | normal |  |  | 6 |  | 4.5 | Etudes V1, V2, APD, DI, Conv Racc | 2026-03-26T12:12:13.416Z |  |  |  |  |
| 678 | 304 | Validation DI |  | normal |  |  | 0 |  | 0 | Etudes V1, V2, APD, DI, Conv Racc | 2026-03-26T12:12:13.848Z |  |  |  |  |
| 679 | 305 | Etude V1 |  | normal |  |  | 0 |  | 105 | Etudes V1, V2, APD, DI, Conv Racc | 2026-03-26T12:12:14.496Z |  |  |  |  |
| 680 | 306 | Contrôle Etude V1 |  | normal |  |  | 0 |  | 9 | Etudes V1, V2, APD, DI, Conv Racc | 2026-03-26T12:12:14.929Z |  |  |  |  |
| 681 | 307 | Etude V2 |  | normal | 2025-05-09 | DURAND Eric | 0 |  | 87.5 | Etudes V1, V2, APD, DI, Conv Racc | 2026-03-26T12:12:15.361Z | 100 | done |  | 2026-03-30T07:48:02.749Z |
| 682 | 308 | Contrôle Etude V2 |  | normal | 2025-08-11 | DURAND Eric | 0 |  | 9 | Etudes V1, V2, APD, DI, Conv Racc | 2026-03-26T12:12:15.793Z | 99 | done |  | 2026-03-30T07:48:36.197Z |
| 683 | 309 | DTT |  | normal |  |  | 0 |  | 52.5 | Etudes V1, V2, APD, DI, Conv Racc | 2026-03-26T12:12:16.225Z |  |  |  |  |
| 684 | 310 | Contrôle DTT |  | normal |  |  | 0 |  | 9 | Etudes V1, V2, APD, DI, Conv Racc | 2026-03-26T12:12:16.656Z |  |  |  |  |
| 685 | 311 | PAQE Etudes |  | normal |  |  | 0 |  | 1 | Etudes V1, V2, APD, DI, Conv Racc | 2026-03-26T12:12:17.083Z |  |  |  |  |
| 686 | 312 | Validation Dossier BPE |  | normal |  |  | 0 |  | 1 | Etudes V1, V2, APD, DI, Conv Racc | 2026-03-26T12:12:17.516Z |  |  |  |  |
| 687 | 313 | Etude V1 |  | normal |  |  | 0 |  | 105 | Etudes V1, V2, APD, DI, Conv Racc | 2026-03-26T12:18:08.586Z |  |  |  |  |
| 688 | 314 | Contrôle Etude V1 |  | normal |  |  | 0 |  | 9 | Etudes V1, V2, APD, DI, Conv Racc | 2026-03-26T12:18:09.028Z |  |  |  |  |
| 689 | 315 | Etude V2 |  | normal |  |  | 0 |  | 87 | Etudes V1, V2, APD, DI, Conv Racc | 2026-03-26T12:18:09.452Z |  |  |  |  |
| 690 | 316 | Contrôle Etude V2 |  | normal |  |  | 0 |  | 9 | Etudes V1, V2, APD, DI, Conv Racc | 2026-03-26T12:18:09.886Z |  |  |  |  |
| 691 | 317 | DTT |  | normal |  |  | 0 |  | 52 | Etudes V1, V2, APD, DI, Conv Racc | 2026-03-26T12:18:10.318Z |  |  |  |  |
| 692 | 318 | Contrôle DTT |  | normal |  |  | 0 |  | 9 | Etudes V1, V2, APD, DI, Conv Racc | 2026-03-26T12:18:10.750Z |  |  |  |  |
| 693 | 319 | PAQE Etudes |  | normal |  |  | 0 |  | 1 | Etudes V1, V2, APD, DI, Conv Racc | 2026-03-26T12:18:11.183Z |  |  |  |  |
| 694 | 320 | Validation Dossier BPE |  | normal |  |  | 0 |  | 1 | Etudes V1, V2, APD, DI, Conv Racc | 2026-03-26T12:18:11.615Z |  |  |  |  |
| 695 | 321 | Convention de raccordement |  | normal | 2027-04-01 | GIRES Anne-Isabelle | 0 | 2027-04-01 | 0 | Etudes V1, V2, APD, DI, Conv Racc | 2026-03-27T08:41:26.627Z | 0 | todo |  | 2026-03-27T08:42:14.724Z |
| 696 | 322 | Rédaction CCTP |  | normal | 2025-12-29 | DURAND Eric | 0 |  | 0 | CCTP, consultations | 2026-03-27T12:40:54.966Z | 0 | done |  | 2026-03-30T07:29:34.467Z |
| 697 | 323 | Soumission Offre technique Entreprise | !\ En attente retour devis MASTERGRID | normal | 2026-04-27 | DURAND Eric | 0 | 2026-04-27 | 0 | CCTP, consultations | 2026-03-27T12:40:55.399Z | 0 | waiting | 1774856644412 Relance Mastergrid True 2025-02-10 1, 1774856660669 Relance Mastergrid True 2025-03-13 1, 1774856692517 Relance Mastergrid  2026-04-02 1 | 2026-03-30T07:45:19.589Z |
| 698 | 324 | Négociation |  | normal |  |  | 0 |  | 0 | CCTP, consultations | 2026-03-27T12:40:55.823Z |  |  |  |  |
| 699 | 325 | Contractualisation Etude |  | normal |  |  | 0 |  | 0 | CCTP, consultations | 2026-03-27T12:40:56.242Z |  |  |  |  |
| 700 | 326 | Etude V1 |  | normal |  |  | 0 |  | 0 | Etudes V1, V2, APD, DI, Conv Racc | 2026-03-27T12:40:56.881Z |  |  |  |  |
| 701 | 327 | Contrôle Etude V1 |  | normal |  |  | 0 |  | 0 | Etudes V1, V2, APD, DI, Conv Racc | 2026-03-27T12:40:57.314Z |  |  |  |  |
| 702 | 328 | Etude V2 |  | normal |  |  | 0 |  | 0 | Etudes V1, V2, APD, DI, Conv Racc | 2026-03-27T12:40:57.738Z |  |  |  |  |
| 703 | 329 | Contrôle Etude V2 |  | normal |  |  | 0 |  | 0 | Etudes V1, V2, APD, DI, Conv Racc | 2026-03-27T12:40:58.161Z |  |  |  |  |
| 704 | 330 | DTT |  | normal |  |  | 0 |  | 0 | Etudes V1, V2, APD, DI, Conv Racc | 2026-03-27T12:40:58.597Z |  |  |  |  |
| 705 | 331 | Contrôle DTT |  | normal |  |  | 0 |  | 0 | Etudes V1, V2, APD, DI, Conv Racc | 2026-03-27T12:40:59.024Z |  |  |  |  |
| 706 | 332 | PAQE Etudes |  | normal |  |  | 0 |  | 0 | Etudes V1, V2, APD, DI, Conv Racc | 2026-03-27T12:40:59.460Z |  |  |  |  |
| 707 | 333 | Validation Dossier BPE |  | normal |  |  | 0 |  | 0 | Etudes V1, V2, APD, DI, Conv Racc | 2026-03-27T12:40:59.895Z |  |  |  |  |
| 708 | 334 | HORS MARCHE CADRE - PARTIE TRAVAUX |  | normal |  |  | 0 |  | 0 | DTT, Travaux | 2026-03-27T12:41:00.544Z |  |  |  |  |
| 709 | 335 | Rédaction CCTP |  | normal | 2025-03-20 | DURAND Eric | 0 |  | 0 | CCTP, consultations | 2026-03-30T07:31:56.514Z | 0 | done |  | 2026-03-30T07:33:07.899Z |
| 710 | 336 | Soumission Offre technique Entreprise |  | normal |  |  | 0 |  | 0 | CCTP, consultations | 2026-03-30T07:31:56.948Z |  |  |  |  |
| 711 | 337 | Négociation |  | normal |  |  | 0 |  | 0 | CCTP, consultations | 2026-03-30T07:31:57.365Z |  |  |  |  |
| 712 | 338 | Contractualisation Etude |  | normal |  |  | 0 |  | 0 | CCTP, consultations | 2026-03-30T07:31:57.782Z |  |  |  |  |
| 713 | 339 | Rédaction CCTP |  | normal | 2026-03-20 | DURAND Eric | 0 |  | 0 | CCTP, consultations | 2026-03-30T07:41:58.697Z | 0 | done |  | 2026-03-30T07:42:35.997Z |
| 714 | 340 | Soumission Offre technique Entreprise |  | normal |  |  | 0 |  | 0 | CCTP, consultations | 2026-03-30T07:41:59.131Z | 0 | todo | 1774856579293 Visite avec Entreprise True 2026-04-17 1 | 2026-03-30T07:43:04.533Z |

| id | category_id | title | priority | due_date | assignee | position | duration_days | tag | created_at | progress | status | milestones | updated_at |
| --- | --- | --- | --- | --- | --- | --- | --- | --- | --- | --- | --- | --- | --- |
| 715 | 341 | Négociation | normal |  |  | 0 | 0 | CCTP, consultations | 2026-03-30T07:41:59.565Z |  |  |  |  |
| 716 | 342 | Contractualisation Etude | normal |  |  | 0 | 0 | CCTP, consultations | 2026-03-30T07:42:00.000Z |  |  |  |  |
| 717 | 343 | Convention de raccordement | normal |  |  | 0 | 0 | Etudes V1, V2, APD, DI, Conv Racc | 2026-03-30T07:50:59.984Z |  |  |  |  |
| 718 | 344 | DT | normal |  |  | 0 | 0 | CTF, CTRP, PTF, Etudes préliminaires - DCT | 2026-03-30T07:55:35.723Z |  |  |  |  |
| 719 | 345 | IST | normal |  |  | 0 | 0 | DTT, Travaux | 2026-03-30T07:55:36.140Z | 0 | todo | 1774857463914 IST travaux SOGC La Perche en cours de validation (09/09/2025, nok le 10/09, V2 le 10/09) -> ok validé GMR True 4, 1774857453275 IST travaux SOGC Latour de Carol (04/09/2025) True 3, 1774857443426 IST travaux INABENSA (04/09/2025, nok V2 le 09/09, envoi V3 le 10/09) True 2, 1774857399066 IST Circulation Inabensa (04/09/2025, nok le 09/09, voir Enedis True 1 | 2026-03-30T07:57:52.362Z |
| 720 | 346 | PPE V1 | normal |  |  | 0 | 0 | DTT, Travaux | 2026-03-30T07:55:36.556Z |  |  |  |  |
| 721 | 347 | Revue de sécurité Amont | normal |  |  | 0 | 0 | DTT, Travaux | 2026-03-30T07:55:36.973Z |  |  |  |  |
| 722 | 348 | DICT | normal |  |  | 0 | 0 | DTT, Travaux | 2026-03-30T07:55:37.389Z |  |  |  |  |
| 723 | 349 | PPE V2 | normal |  |  | 0 | 0 | DTT, Travaux | 2026-03-30T07:55:37.806Z |  |  |  |  |
| 724 | 350 | Rédaction CCTP | normal | 2025-06-11 | DURAND Eric | 0 | 0 | CCTP, consultations | 2026-03-30T11:09:11.349Z | 100 | done |  | 2026-03-30T11:10:08.222Z |
| 725 | 351 | Soumission Offre technique Entreprise | normal |  |  | 0 | 0 | CCTP, consultations | 2026-03-30T11:09:11.764Z |  |  |  |  |
| 726 | 352 | Négociation | normal |  |  | 0 | 0 | CCTP, consultations | 2026-03-30T11:09:12.181Z |  |  |  |  |
| 727 | 353 | Contractualisation Etude | normal | 2025-09-17 | DURAND Eric | 0 | 0 | CCTP, consultations | 2026-03-30T11:09:12.609Z | 100 | done |  | 2026-03-30T11:10:56.694Z |
| 728 | 354 | Rédaction CCTP | normal |  |  | 0 | 0 | CCTP, consultations | 2026-03-30T11:11:25.638Z |  |  |  |  |
| 729 | 355 | Soumission Offre technique Entreprise | normal |  |  | 0 | 0 | CCTP, consultations | 2026-03-30T11:11:26.064Z |  |  |  |  |
| 730 | 356 | Négociation | normal |  |  | 0 | 0 | CCTP, consultations | 2026-03-30T11:11:26.498Z |  |  |  |  |
| 731 | 357 | Contractualisation Etude | normal |  |  | 0 | 0 | CCTP, consultations | 2026-03-30T11:11:26.931Z |  |  |  |  |
